# X

How a schedule from ProjectLibre changed from version to version. A marks actual dates.

## Version 1 (saved 2024-09-24)

Note of the change: Prova

| ID | WBS | Task | Duration | Start | Finish | Predecessors | Complete |
| --- | --- | --- | --- | --- | --- | --- | --- |
| 1 | 1 | **ProjetoIZZY** | 54.77d? | 2024-09-09 | 2024-11-22 |  | 16% |
| 2 | 1.1 | **Prospecção** | 1.25d? | 2024-09-09 | 2024-09-10 |  | 100% |
| 3 | 1.1.1 | **PTEC** | 1.25d? | 2024-09-09 | 2024-09-10 |  | 100% |
| 4 |  | Estudar o domínio de aplicaçao do sistema | 1.25d | 2024-09-09 | 2024-09-10 |  | 100% |
| 5 |  | Redigir PTE | 1.25d? | 2024-09-09 | 2024-09-10 | 4 | 100% |
| 6 |  | Revisar PTE | 0.25d? | 2024-09-09 | 2024-09-09 | 5 | 100% |
| 7 | 1.1.2 | **Est. Prel. Tam** | 1d? | 2024-09-09 | 2024-09-09 |  | 100% |
| 8 |  | Estimar Tamanho do Projeto | 1d? | 2024-09-09 | 2024-09-09 | 4 | 100% |
| 9 |  | Revisar Estimar Tamanho do Projeto | 0.25d? | 2024-09-09 | 2024-09-09 | 8 | 100% |
| 10 | 1.2 | **Análise** | 12.12d? | 2024-09-10 | 2024-09-26 |  | 73% |
| 11 | 1.2.1 | **DRE** | 6d | 2024-09-10 | 2024-09-18 |  | 100% |
| 12 |  | Levantar Requisitos do Sistema | 2.5d | 2024-09-10 | 2024-09-12 | 6 | 100% |
| 13 |  | Redigir DRE | 2.75d | 2024-09-12 | 2024-09-17 | 12 | 100% |
| 14 |  | Revisar DRE | 0.75d | 2024-09-17 | 2024-09-18 | 13 | 100% |
| 15 | 1.2.2 | **MRB** | 6.12d? | 2024-09-18 | 2024-09-26 |  | 46% |
| 16 |  | Elaborar MRB | 5.62d? | 2024-09-18 | 2024-09-25 | 14 | 50% |
| 17 |  | Revisar MRB | 0.5d? | 2024-09-25 | 2024-09-26 | 16 |  |
| 18 | 1.3 | **Planejamento** | 6.38d? | 2024-09-18 | 2024-09-26 |  |  |
| 19 |  | Desenvolver Plano de Projeto | 0.25d? | 2024-09-18 | 2024-09-18 | 14 |  |
| 20 |  | Elaborar Estimativa de Tamanho/Esforço | 0.25d? | 2024-09-18 | 2024-09-18 | 14 |  |
| 21 |  | Revisar Est. de Tamanho/Esforço | 0.12d? | 2024-09-18 | 2024-09-18 | 20 |  |
| 22 |  | Elaborar Cronograma | 1d? | 2024-09-18 | 2024-09-19 | 19 |  |
| 23 |  | Revisar Cronograma | 0.12d? | 2024-09-19 | 2024-09-19 | 22 |  |
| 24 |  | Elaborar Protótipo | 6.25d? | 2024-09-18 | 2024-09-26 | 14 |  |
| 25 |  | Revisar Protótipo | 0.12d? | 2024-09-26 | 2024-09-26 | 24 |  |
| 26 | 1.4 | **Desenvolvimento** | 33.15d? | 2024-09-26 | 2024-11-12 |  |  |
| 27 | 1.4.1 | **Sprint 1** | 14.6d? | 2024-09-26 | 2024-10-17 |  |  |
| 28 | 1.4.1.1 | **Implementação** | 13.5d? | 2024-09-26 | 2024-10-16 |  |  |
| 29 |  | Manter Usuários | 5d? | 2024-09-26 | 2024-10-03 | 25 |  |
| 30 |  | Realizar Testes | 1d | 2024-10-03 | 2024-10-04 | 29 |  |
| 31 |  | Manter IZZY's | 6.25d? | 2024-10-04 | 2024-10-14 | 30 |  |
| 32 |  | Realizar Testes | 1.25d? | 2024-10-14 | 2024-10-16 | 31 |  |
| 33 | 1.4.1.2 | **Monitoramento e Controle** | 1d? | 2024-10-16 | 2024-10-17 |  |  |
| 34 |  | Status Report | 1d? | 2024-10-16 | 2024-10-17 | 32 |  |
| 35 |  | Atualizar Cronograma | 1d? | 2024-10-16 | 2024-10-17 | 32 |  |
| 36 | 1.4.1.3 | **Gerência de Configuração** | 0.1d? | 2024-10-17 | 2024-10-17 |  |  |
| 37 |  | Gerar nova Tag de Configuração | 0.1d? | 2024-10-17 | 2024-10-17 | 35, 34 |  |
| 38 | 1.4.2 | **Sprint 2** | 11.85d? | 2024-10-17 | 2024-11-04 |  |  |
| 39 | 1.4.2.1 | **Implementação** | 9.75d? | 2024-10-17 | 2024-10-30 |  |  |
| 40 |  | Manter Membros de um IZZY | 6.25d | 2024-10-17 | 2024-10-25 | 37 |  |
| 41 |  | Realizar Testes | 1.25d? | 2024-10-25 | 2024-10-28 | 40 |  |
| 42 |  | Manter Atividades | 8.12d? | 2024-10-17 | 2024-10-29 | 37 |  |
| 43 |  | Realizar Testes | 1.62d? | 2024-10-29 | 2024-10-30 | 42 |  |
| 44 | 1.4.2.2 | **Monitoramento de Controle** | 2d? | 2024-10-30 | 2024-11-01 |  |  |
| 45 |  | Status Report | 1d? | 2024-10-30 | 2024-10-31 | 43 |  |
| 46 |  | Atualizar Cronograma | 1d? | 2024-10-31 | 2024-11-01 | 45 |  |
| 47 | 1.4.2.3 | **Gerência de Configuração** | 0.1d | 2024-11-01 | 2024-11-04 |  |  |
| 48 |  | Gerar nova Tag de Configuração | 0.1d | 2024-11-01 | 2024-11-04 | 46, 45 |  |
| 49 | 1.4.3 | **Sprint 3** | 3d? | 2024-11-04 | 2024-11-07 |  |  |
| 50 | 1.4.3.1 | **Implementação** | 3d? | 2024-11-04 | 2024-11-07 |  |  |
| 51 |  | Manter Fotos | 2.5d | 2024-11-04 | 2024-11-06 | 48 |  |
| 52 |  | Realizar Testes | 0.5d? | 2024-11-06 | 2024-11-07 | 51 |  |
| 53 |  | Relatório de Atividades | 1.25d? | 2024-11-04 | 2024-11-05 | 48 |  |
| 54 |  | Realizar Testes | 0.25d? | 2024-11-05 | 2024-11-05 | 53 |  |
| 55 | 1.4.3.2 | **Monitoramento de Controle** | 1d? | 2024-11-05 | 2024-11-06 |  |  |
| 56 |  | Status Report | 1d? | 2024-11-05 | 2024-11-06 | 54 |  |
| 57 |  | Atualizar Cronograma | 1d? | 2024-11-05 | 2024-11-06 | 54 |  |
| 58 | 1.4.3.3 | **Gerência de Configuração** | 0.1d | 2024-11-06 | 2024-11-06 |  |  |
| 59 |  | Gerar nova Tag de Configuração | 0.1d | 2024-11-06 | 2024-11-06 | 56, 57 |  |
| 60 | 1.4.4 | **Sprint 4** | 4.1d? | 2024-11-06 | 2024-11-12 |  |  |
| 61 | 1.4.4.1 | **Implementação** | 3d? | 2024-11-06 | 2024-11-11 |  |  |
| 62 |  | Relatório de Atividades Atrasadas | 1.88d | 2024-11-06 | 2024-11-08 | 59 |  |
| 63 |  | Realizar Testes | 0.38d | 2024-11-08 | 2024-11-08 | 62 |  |
| 64 |  | Relatório de Participação dos Membros | 2.5d? | 2024-11-06 | 2024-11-11 | 59 |  |
| 65 |  | Realizar Testes | 0.5d? | 2024-11-11 | 2024-11-11 | 64 |  |
| 66 | 1.4.4.2 | **Monitoramento de Controle** | 1d? | 2024-11-11 | 2024-11-12 |  |  |
| 67 |  | Status Report | 1d? | 2024-11-11 | 2024-11-12 | 65 |  |
| 68 |  | Atualizar Cronograma | 1d? | 2024-11-11 | 2024-11-12 | 65 |  |
| 69 | 1.4.4.3 | **Gerência de Configuração** | 0.1d | 2024-11-12 | 2024-11-12 |  |  |
| 70 |  | Gerar nova Tag de Configuração | 0.1d | 2024-11-12 | 2024-11-12 | 67, 68 |  |

| ID | WBS | Task | Duration | Start | Finish | Predecessors | Constraint |
| --- | --- | --- | --- | --- | --- | --- | --- |
| 71 | 1.5 | **Fechamento** | 8d? | 2024-11-12 | 2024-11-22 |  |  |
| 72 |  | Apresentação do projeto ao cliente | 2d? | 2024-11-12 | 2024-11-14 | 70 |  |
| 73 |  | Entrega do projeto ao cliente | 2d? | 2024-11-14 | 2024-11-18 | 72 |  |
| 74 |  | Implantação do sistema | 4d? | 2024-11-18 | 2024-11-22 | 73 |  |
| 75 |  | Finalização | 0d? | 2024-11-22 | 2024-11-22 | 74 | start no earlier than 2024-09-09 |

## Version 2 (saved 2024-10-03)

Note of the change: Atualização cronograma e MRB

Last finish stays 2024-11-22. Complete tasks 8 → 15.

Changed:

| ID | Task | Complete | Other |
| --- | --- | --- | --- |
| 1 | **ProjetoIZZY** | 16% → 22% | baseline finish 2024-09-26 → 2024-11-22 |
| 2 | **Prospecção** |  | baseline start none → 2024-09-09; baseline finish none → 2024-09-10 |
| 3 | **PTEC** |  | baseline start none → 2024-09-09; baseline finish none → 2024-09-10 |
| 4 | Estudar o domínio de aplicaçao do sistema |  | baseline start 1969-12-31 → 2024-09-09; baseline finish 1969-12-31 → 2024-09-10 |
| 5 | Redigir PTE |  | baseline start none → 2024-09-09; baseline finish none → 2024-09-10 |
| 6 | Revisar PTE |  | baseline start none → 2024-09-09; baseline finish none → 2024-09-09 |
| 7 | **Est. Prel. Tam** |  | baseline start none → 2024-09-09; baseline finish none → 2024-09-09 |
| 8 | Estimar Tamanho do Projeto |  | baseline start none → 2024-09-09; baseline finish none → 2024-09-09 |
| 9 | Revisar Estimar Tamanho do Projeto |  | baseline start none → 2024-09-09; baseline finish none → 2024-09-09 |
| 10 | **Análise** | 73% → 100% | baseline start 1969-12-31 → 2024-09-10; baseline finish 1969-12-31 → 2024-09-26 |
| 11 | **DRE** |  | baseline start 1969-12-31 → 2024-09-10; baseline finish 1969-12-31 → 2024-09-18 |
| 12 | Levantar Requisitos do Sistema |  | baseline start 1969-12-31 → 2024-09-10; baseline finish 1969-12-31 → 2024-09-12 |
| 13 | Redigir DRE |  | baseline start 1969-12-31 → 2024-09-12; baseline finish 1969-12-31 → 2024-09-17 |
| 14 | Revisar DRE |  | baseline start 1969-12-31 → 2024-09-17; baseline finish 1969-12-31 → 2024-09-18 |
| 15 | **MRB** | 46% → 100% | baseline start 1969-12-31 → 2024-09-18; baseline finish 1969-12-31 → 2024-09-26 |
| 16 | Elaborar MRB | 50% → 100% | baseline start 1969-12-31 → 2024-09-18; baseline finish 1969-12-31 → 2024-09-25 |
| 17 | Revisar MRB | 0% → 100% | baseline start 1969-12-31 → 2024-09-25; baseline finish 1969-12-31 → 2024-09-26 |
| 18 | **Planejamento** | 0% → 22% | baseline start 1969-12-31 → 2024-09-18; baseline finish 1969-12-31 → 2024-09-26 |
| 19 | Desenvolver Plano de Projeto | 0% → 100% | baseline start 1969-12-31 → 2024-09-18; baseline finish 1969-12-31 → 2024-09-18 |
| 20 | Elaborar Estimativa de Tamanho/Esforço | 0% → 100% | baseline start 1969-12-31 → 2024-09-18; baseline finish 1969-12-31 → 2024-09-18 |
| 21 | Revisar Est. de Tamanho/Esforço | 0% → 100% | baseline start 1969-12-31 → 2024-09-18; baseline finish 1969-12-31 → 2024-09-18 |
| 22 | Elaborar Cronograma | 0% → 100% | baseline start 1969-12-31 → 2024-09-18; baseline finish 1969-12-31 → 2024-09-19 |
| 23 | Revisar Cronograma | 0% → 100% | baseline start 1969-12-31 → 2024-09-19; baseline finish 1969-12-31 → 2024-09-19 |
| 24 | Elaborar Protótipo |  | baseline start 1969-12-31 → 2024-09-18; baseline finish 1969-12-31 → 2024-09-26 |
| 25 | Revisar Protótipo |  | baseline start 1969-12-31 → 2024-09-26; baseline finish 1969-12-31 → 2024-09-26 |
| 26 | **Desenvolvimento** |  | baseline start 1969-12-31 → 2024-09-26; baseline finish 1969-12-31 → 2024-11-12 |
| 27 | **Sprint 1** |  | baseline start 1969-12-31 → 2024-09-26; baseline finish 1969-12-31 → 2024-10-17 |
| 28 | **Implementação** |  | baseline start 1969-12-31 → 2024-09-26; baseline finish 1969-12-31 → 2024-10-16 |
| 29 | Manter Usuários |  | baseline start 1969-12-31 → 2024-09-26; baseline finish 1969-12-31 → 2024-10-03 |
| 30 | Realizar Testes |  | baseline start 1969-12-31 → 2024-10-03; baseline finish 1969-12-31 → 2024-10-04 |
| 31 | Manter IZZY's |  | baseline start 1969-12-31 → 2024-10-04; baseline finish 1969-12-31 → 2024-10-14 |
| 32 | Realizar Testes |  | baseline start 1969-12-31 → 2024-10-14; baseline finish 1969-12-31 → 2024-10-16 |
| 33 | **Monitoramento e Controle** |  | baseline start 1969-12-31 → 2024-10-16; baseline finish 1969-12-31 → 2024-10-17 |
| 34 | Status Report |  | baseline start 1969-12-31 → 2024-10-16; baseline finish 1969-12-31 → 2024-10-17 |
| 35 | Atualizar Cronograma |  | baseline start 1969-12-31 → 2024-10-16; baseline finish 1969-12-31 → 2024-10-17 |
| 36 | **Gerência de Configuração** |  | baseline start 1969-12-31 → 2024-10-17; baseline finish 1969-12-31 → 2024-10-17 |
| 37 | Gerar nova Tag de Configuração |  | baseline start 1969-12-31 → 2024-10-17; baseline finish 1969-12-31 → 2024-10-17 |
| 38 | **Sprint 2** |  | baseline start 1969-12-31 → 2024-10-17; baseline finish 1969-12-31 → 2024-11-04 |
| 39 | **Implementação** |  | baseline start 1969-12-31 → 2024-10-17; baseline finish 1969-12-31 → 2024-10-30 |
| 40 | Manter Membros de um IZZY |  | baseline start 1969-12-31 → 2024-10-17; baseline finish 1969-12-31 → 2024-10-25 |
| 41 | Realizar Testes |  | baseline start 1969-12-31 → 2024-10-25; baseline finish 1969-12-31 → 2024-10-28 |
| 42 | Manter Atividades |  | baseline start none → 2024-10-17; baseline finish none → 2024-10-29 |
| 43 | Realizar Testes |  | baseline start none → 2024-10-29; baseline finish none → 2024-10-30 |
| 44 | **Monitoramento de Controle** |  | baseline start 1969-12-31 → 2024-10-30; baseline finish 1969-12-31 → 2024-11-01 |
| 45 | Status Report |  | baseline start 1969-12-31 → 2024-10-30; baseline finish 1969-12-31 → 2024-10-31 |
| 46 | Atualizar Cronograma |  | baseline start 1969-12-31 → 2024-10-31; baseline finish 1969-12-31 → 2024-11-01 |
| 47 | **Gerência de Configuração** |  | baseline start 1969-12-31 → 2024-11-01; baseline finish 1969-12-31 → 2024-11-04 |
| 48 | Gerar nova Tag de Configuração |  | baseline start 1969-12-31 → 2024-11-01; baseline finish 1969-12-31 → 2024-11-04 |
| 49 | **Sprint 3** |  | baseline start 1969-12-31 → 2024-11-04; baseline finish 1969-12-31 → 2024-11-07 |
| 50 | **Implementação** |  | baseline start 1969-12-31 → 2024-11-04; baseline finish 1969-12-31 → 2024-11-07 |
| 51 | Manter Fotos |  | baseline start 1969-12-31 → 2024-11-04; baseline finish 1969-12-31 → 2024-11-06 |
| 52 | Realizar Testes |  | baseline start 1969-12-31 → 2024-11-06; baseline finish 1969-12-31 → 2024-11-07 |
| 53 | Relatório de Atividades |  | baseline start none → 2024-11-04; baseline finish none → 2024-11-05 |
| 54 | Realizar Testes |  | baseline start none → 2024-11-05; baseline finish none → 2024-11-05 |
| 55 | **Monitoramento de Controle** |  | baseline start 1969-12-31 → 2024-11-05; baseline finish 1969-12-31 → 2024-11-06 |
| 56 | Status Report |  | baseline start 1969-12-31 → 2024-11-05; baseline finish 1969-12-31 → 2024-11-06 |
| 57 | Atualizar Cronograma |  | baseline start 1969-12-31 → 2024-11-05; baseline finish 1969-12-31 → 2024-11-06 |
| 58 | **Gerência de Configuração** |  | baseline start 1969-12-31 → 2024-11-06; baseline finish 1969-12-31 → 2024-11-06 |
| 59 | Gerar nova Tag de Configuração |  | baseline start 1969-12-31 → 2024-11-06; baseline finish 1969-12-31 → 2024-11-06 |
| 60 | **Sprint 4** |  | baseline start 1969-12-31 → 2024-11-06; baseline finish 1969-12-31 → 2024-11-12 |
| 61 | **Implementação** |  | baseline start 1969-12-31 → 2024-11-06; baseline finish 1969-12-31 → 2024-11-11 |
| 62 | Relatório de Atividades Atrasadas |  | baseline start 1969-12-31 → 2024-11-06; baseline finish 1969-12-31 → 2024-11-08 |
| 63 | Realizar Testes |  | baseline start 1969-12-31 → 2024-11-08; baseline finish 1969-12-31 → 2024-11-08 |
| 64 | Relatório de Participação dos Membros |  | baseline start none → 2024-11-06; baseline finish none → 2024-11-11 |
| 65 | Realizar Testes |  | baseline start none → 2024-11-11; baseline finish none → 2024-11-11 |
| 66 | **Monitoramento de Controle** |  | baseline start 1969-12-31 → 2024-11-11; baseline finish 1969-12-31 → 2024-11-12 |
| 67 | Status Report |  | baseline start 1969-12-31 → 2024-11-11; baseline finish 1969-12-31 → 2024-11-12 |
| 68 | Atualizar Cronograma |  | baseline start 1969-12-31 → 2024-11-11; baseline finish 1969-12-31 → 2024-11-12 |
| 69 | **Gerência de Configuração** |  | baseline start 1969-12-31 → 2024-11-12; baseline finish 1969-12-31 → 2024-11-12 |
| 70 | Gerar nova Tag de Configuração |  | baseline start 1969-12-31 → 2024-11-12; baseline finish 1969-12-31 → 2024-11-12 |

| ID | Task | Other |
| --- | --- | --- |
| 71 | **Fechamento** | baseline start none → 2024-11-12; baseline finish none → 2024-11-22 |
| 72 | Apresentação do projeto ao cliente | baseline start none → 2024-11-12; baseline finish none → 2024-11-14 |
| 73 | Entrega do projeto ao cliente | baseline start none → 2024-11-14; baseline finish none → 2024-11-18 |
| 74 | Implantação do sistema | baseline start none → 2024-11-18; baseline finish none → 2024-11-22 |
| 75 | Finalização | baseline start 1969-12-31 → 2024-11-22; baseline finish 1969-12-31 → 2024-11-22 |

## Version 3 (saved 2024-10-29)

Note of the change: Mudanças nos requisitos de atividades

Last finish 2024-11-22 → 2024-11-26 (+4d).

Changed:

| ID | Task | Start | Finish | Duration | Complete |
| --- | --- | --- | --- | --- | --- |
| 1 | **ProjetoIZZY** |  | 2024-11-22 → 2024-11-26 (+4d) | 54.77d? → 56.27d? | 22% → 26% |
| 18 | **Planejamento** |  | 2024-09-26 → 2024-09-30 (+4d) | 6.38d? → 7.88d? | 22% → 58% |
| 24 | Elaborar Protótipo |  | 2024-09-26 → 2024-09-27 (+1d) | 6.25d? → 7.75d? | 0% → 50% |
| 25 | Revisar Protótipo | 2024-09-26 → 2024-09-30 (+4d) | 2024-09-26 → 2024-09-30 (+4d) |  |  |
| 26 | **Desenvolvimento** | 2024-09-26 → 2024-09-30 (+4d) | 2024-11-12 → 2024-11-14 (+2d) |  |  |
| 27 | **Sprint 1** | 2024-09-26 → 2024-09-30 (+4d) | 2024-10-17 → 2024-10-18 (+1d) |  |  |
| 28 | **Implementação** | 2024-09-26 → 2024-09-30 (+4d) | 2024-10-16 → 2024-10-17 (+1d) |  |  |
| 29 | Manter Usuários | 2024-09-26 → 2024-09-30 (+4d) | 2024-10-03 → 2024-10-07 (+4d) |  |  |
| 30 | Realizar Testes | 2024-10-03 → 2024-10-07 (+4d) | 2024-10-04 → 2024-10-08 (+4d) |  |  |
| 31 | Manter IZZY's | 2024-10-04 → 2024-10-08 (+4d) | 2024-10-14 → 2024-10-16 (+2d) |  |  |
| 32 | Realizar Testes | 2024-10-14 → 2024-10-16 (+2d) | 2024-10-16 → 2024-10-17 (+1d) |  |  |
| 33 | **Monitoramento e Controle** | 2024-10-16 → 2024-10-17 (+1d) | 2024-10-17 → 2024-10-18 (+1d) |  |  |
| 34 | Status Report | 2024-10-16 → 2024-10-17 (+1d) | 2024-10-17 → 2024-10-18 (+1d) |  |  |
| 35 | Atualizar Cronograma | 2024-10-16 → 2024-10-17 (+1d) | 2024-10-17 → 2024-10-18 (+1d) |  |  |
| 36 | **Gerência de Configuração** | 2024-10-17 → 2024-10-18 (+1d) | 2024-10-17 → 2024-10-18 (+1d) |  |  |
| 37 | Gerar nova Tag de Configuração | 2024-10-17 → 2024-10-18 (+1d) | 2024-10-17 → 2024-10-18 (+1d) |  |  |
| 38 | **Sprint 2** | 2024-10-17 → 2024-10-18 (+1d) | 2024-11-04 → 2024-11-05 (+1d) |  |  |
| 39 | **Implementação** | 2024-10-17 → 2024-10-18 (+1d) | 2024-10-30 → 2024-11-01 (+2d) |  |  |
| 40 | Manter Membros de um IZZY | 2024-10-17 → 2024-10-18 (+1d) | 2024-10-25 → 2024-10-28 (+3d) |  |  |
| 41 | Realizar Testes | 2024-10-25 → 2024-10-28 (+3d) | 2024-10-28 → 2024-10-30 (+2d) |  |  |
| 42 | Manter Atividades | 2024-10-17 → 2024-10-18 (+1d) | 2024-10-29 → 2024-10-30 (+1d) |  |  |
| 43 | Realizar Testes | 2024-10-29 → 2024-10-30 (+1d) | 2024-10-30 → 2024-11-01 (+2d) |  |  |
| 44 | **Monitoramento de Controle** | 2024-10-30 → 2024-11-01 (+2d) | 2024-11-01 → 2024-11-05 (+4d) |  |  |
| 45 | Status Report | 2024-10-30 → 2024-11-01 (+2d) | 2024-10-31 → 2024-11-04 (+4d) |  |  |
| 46 | Atualizar Cronograma | 2024-10-31 → 2024-11-04 (+4d) | 2024-11-01 → 2024-11-05 (+4d) |  |  |
| 47 | **Gerência de Configuração** | 2024-11-01 → 2024-11-05 (+4d) | 2024-11-04 → 2024-11-05 (+1d) |  |  |
| 48 | Gerar nova Tag de Configuração | 2024-11-01 → 2024-11-05 (+4d) | 2024-11-04 → 2024-11-05 (+1d) |  |  |
| 49 | **Sprint 3** | 2024-11-04 → 2024-11-05 (+1d) | 2024-11-07 → 2024-11-08 (+1d) |  |  |
| 50 | **Implementação** | 2024-11-04 → 2024-11-05 (+1d) | 2024-11-07 → 2024-11-08 (+1d) |  |  |
| 51 | Manter Fotos | 2024-11-04 → 2024-11-05 (+1d) | 2024-11-06 → 2024-11-08 (+2d) |  |  |
| 52 | Realizar Testes | 2024-11-06 → 2024-11-08 (+2d) | 2024-11-07 → 2024-11-08 (+1d) |  |  |
| 53 | Relatório de Atividades | 2024-11-04 → 2024-11-05 (+1d) | 2024-11-05 → 2024-11-06 (+1d) |  |  |
| 54 | Realizar Testes | 2024-11-05 → 2024-11-06 (+1d) | 2024-11-05 → 2024-11-07 (+2d) |  |  |
| 55 | **Monitoramento de Controle** | 2024-11-05 → 2024-11-07 (+2d) | 2024-11-06 → 2024-11-08 (+2d) |  |  |
| 56 | Status Report | 2024-11-05 → 2024-11-07 (+2d) | 2024-11-06 → 2024-11-08 (+2d) |  |  |
| 57 | Atualizar Cronograma | 2024-11-05 → 2024-11-07 (+2d) | 2024-11-06 → 2024-11-08 (+2d) |  |  |
| 58 | **Gerência de Configuração** | 2024-11-06 → 2024-11-08 (+2d) | 2024-11-06 → 2024-11-08 (+2d) |  |  |
| 59 | Gerar nova Tag de Configuração | 2024-11-06 → 2024-11-08 (+2d) | 2024-11-06 → 2024-11-08 (+2d) |  |  |
| 60 | **Sprint 4** | 2024-11-06 → 2024-11-08 (+2d) | 2024-11-12 → 2024-11-14 (+2d) |  |  |
| 61 | **Implementação** | 2024-11-06 → 2024-11-08 (+2d) | 2024-11-11 → 2024-11-13 (+2d) |  |  |
| 62 | Relatório de Atividades Atrasadas | 2024-11-06 → 2024-11-08 (+2d) | 2024-11-08 → 2024-11-12 (+4d) |  |  |
| 63 | Realizar Testes | 2024-11-08 → 2024-11-12 (+4d) | 2024-11-08 → 2024-11-12 (+4d) |  |  |
| 64 | Relatório de Participação dos Membros | 2024-11-06 → 2024-11-08 (+2d) | 2024-11-11 → 2024-11-12 (+1d) |  |  |
| 65 | Realizar Testes | 2024-11-11 → 2024-11-12 (+1d) | 2024-11-11 → 2024-11-13 (+2d) |  |  |
| 66 | **Monitoramento de Controle** | 2024-11-11 → 2024-11-13 (+2d) | 2024-11-12 → 2024-11-14 (+2d) |  |  |
| 67 | Status Report | 2024-11-11 → 2024-11-13 (+2d) | 2024-11-12 → 2024-11-14 (+2d) |  |  |
| 68 | Atualizar Cronograma | 2024-11-11 → 2024-11-13 (+2d) | 2024-11-12 → 2024-11-14 (+2d) |  |  |
| 69 | **Gerência de Configuração** | 2024-11-12 → 2024-11-14 (+2d) | 2024-11-12 → 2024-11-14 (+2d) |  |  |
| 70 | Gerar nova Tag de Configuração | 2024-11-12 → 2024-11-14 (+2d) | 2024-11-12 → 2024-11-14 (+2d) |  |  |
| 71 | **Fechamento** | 2024-11-12 → 2024-11-14 (+2d) | 2024-11-22 → 2024-11-26 (+4d) |  |  |
| 72 | Apresentação do projeto ao cliente | 2024-11-12 → 2024-11-14 (+2d) | 2024-11-14 → 2024-11-18 (+4d) |  |  |
| 73 | Entrega do projeto ao cliente | 2024-11-14 → 2024-11-18 (+4d) | 2024-11-18 → 2024-11-20 (+2d) |  |  |
| 74 | Implantação do sistema | 2024-11-18 → 2024-11-20 (+2d) | 2024-11-22 → 2024-11-26 (+4d) |  |  |
| 75 | Finalização | 2024-11-22 → 2024-11-26 (+4d) | 2024-11-22 → 2024-11-26 (+4d) |  |  |

## Version 4 (saved 2024-11-04)

Note of the change: Update cronograma-izzy.pod

Last finish 2024-11-26 → 2024-12-16 (+20d). Complete tasks 15 → 17.

Changed:

| ID | Task | Start | Finish | Duration | Complete |
| --- | --- | --- | --- | --- | --- |
| 1 | **ProjetoIZZY** |  | 2024-11-26 → 2024-12-16 (+20d) | 56.27d? → 70.03d? | 26% → 44% |
| 18 | **Planejamento** |  | 2024-09-30 → 2024-10-17 (+17d) | 7.88d? → 21.62d? | 58% → 100% |
| 24 | Elaborar Protótipo |  | 2024-09-27 → 2024-10-04 (+7d) | 7.75d? → 12.75d? | 50% → 100% |
| 25 | Revisar Protótipo |  | 2024-09-30 → 2024-10-17 (+17d) | 0.12d? → 13.88d? | 0% → 100% |
| 26 | **Desenvolvimento** | 2024-09-30 → 2024-10-17 (+17d) | 2024-11-14 → 2024-12-04 (+20d) |  |  |
| 27 | **Sprint 1** | 2024-09-30 → 2024-10-17 (+17d) | 2024-10-18 → 2024-11-07 (+20d) |  |  |
| 28 | **Implementação** | 2024-09-30 → 2024-10-17 (+17d) | 2024-10-17 → 2024-11-06 (+20d) |  |  |
| 29 | Manter Usuários | 2024-09-30 → 2024-10-17 (+17d) | 2024-10-07 → 2024-10-24 (+17d) |  |  |
| 30 | Realizar Testes | 2024-10-07 → 2024-10-24 (+17d) | 2024-10-08 → 2024-10-25 (+17d) |  |  |
| 31 | Manter IZZY's | 2024-10-08 → 2024-10-25 (+17d) | 2024-10-16 → 2024-11-05 (+20d) |  |  |
| 32 | Realizar Testes | 2024-10-16 → 2024-11-05 (+20d) | 2024-10-17 → 2024-11-06 (+20d) |  |  |
| 33 | **Monitoramento e Controle** | 2024-10-17 → 2024-11-06 (+20d) | 2024-10-18 → 2024-11-07 (+20d) |  |  |
| 34 | Status Report | 2024-10-17 → 2024-11-06 (+20d) | 2024-10-18 → 2024-11-07 (+20d) |  |  |
| 35 | Atualizar Cronograma | 2024-10-17 → 2024-11-06 (+20d) | 2024-10-18 → 2024-11-07 (+20d) |  |  |
| 36 | **Gerência de Configuração** | 2024-10-18 → 2024-11-07 (+20d) | 2024-10-18 → 2024-11-07 (+20d) |  |  |
| 37 | Gerar nova Tag de Configuração | 2024-10-18 → 2024-11-07 (+20d) | 2024-10-18 → 2024-11-07 (+20d) |  |  |
| 38 | **Sprint 2** | 2024-10-18 → 2024-11-07 (+20d) | 2024-11-05 → 2024-11-25 (+20d) |  |  |
| 39 | **Implementação** | 2024-10-18 → 2024-11-07 (+20d) | 2024-11-01 → 2024-11-21 (+20d) |  |  |
| 40 | Manter Membros de um IZZY | 2024-10-18 → 2024-11-07 (+20d) | 2024-10-28 → 2024-11-15 (+18d) |  |  |
| 41 | Realizar Testes | 2024-10-28 → 2024-11-15 (+18d) | 2024-10-30 → 2024-11-18 (+19d) |  |  |
| 42 | Manter Atividades | 2024-10-18 → 2024-11-07 (+20d) | 2024-10-30 → 2024-11-19 (+20d) |  |  |
| 43 | Realizar Testes | 2024-10-30 → 2024-11-19 (+20d) | 2024-11-01 → 2024-11-21 (+20d) |  |  |
| 44 | **Monitoramento de Controle** | 2024-11-01 → 2024-11-21 (+20d) | 2024-11-05 → 2024-11-25 (+20d) |  |  |
| 45 | Status Report | 2024-11-01 → 2024-11-21 (+20d) | 2024-11-04 → 2024-11-22 (+18d) |  |  |
| 46 | Atualizar Cronograma | 2024-11-04 → 2024-11-22 (+18d) | 2024-11-05 → 2024-11-25 (+20d) |  |  |
| 47 | **Gerência de Configuração** | 2024-11-05 → 2024-11-25 (+20d) | 2024-11-05 → 2024-11-25 (+20d) |  |  |
| 48 | Gerar nova Tag de Configuração | 2024-11-05 → 2024-11-25 (+20d) | 2024-11-05 → 2024-11-25 (+20d) |  |  |
| 49 | **Sprint 3** | 2024-11-05 → 2024-11-25 (+20d) | 2024-11-08 → 2024-11-28 (+20d) |  |  |
| 50 | **Implementação** | 2024-11-05 → 2024-11-25 (+20d) | 2024-11-08 → 2024-11-28 (+20d) |  |  |
| 51 | Manter Fotos | 2024-11-05 → 2024-11-25 (+20d) | 2024-11-08 → 2024-11-27 (+19d) |  |  |
| 52 | Realizar Testes | 2024-11-08 → 2024-11-27 (+19d) | 2024-11-08 → 2024-11-28 (+20d) |  |  |
| 53 | Relatório de Atividades | 2024-11-05 → 2024-11-25 (+20d) | 2024-11-06 → 2024-11-26 (+20d) |  |  |
| 54 | Realizar Testes | 2024-11-06 → 2024-11-26 (+20d) | 2024-11-07 → 2024-11-26 (+19d) |  |  |
| 55 | **Monitoramento de Controle** | 2024-11-07 → 2024-11-26 (+19d) | 2024-11-08 → 2024-11-27 (+19d) |  |  |
| 56 | Status Report | 2024-11-07 → 2024-11-26 (+19d) | 2024-11-08 → 2024-11-27 (+19d) |  |  |
| 57 | Atualizar Cronograma | 2024-11-07 → 2024-11-26 (+19d) | 2024-11-08 → 2024-11-27 (+19d) |  |  |
| 58 | **Gerência de Configuração** | 2024-11-08 → 2024-11-27 (+19d) | 2024-11-08 → 2024-11-27 (+19d) |  |  |
| 59 | Gerar nova Tag de Configuração | 2024-11-08 → 2024-11-27 (+19d) | 2024-11-08 → 2024-11-27 (+19d) |  |  |
| 60 | **Sprint 4** | 2024-11-08 → 2024-11-27 (+19d) | 2024-11-14 → 2024-12-04 (+20d) |  |  |
| 61 | **Implementação** | 2024-11-08 → 2024-11-27 (+19d) | 2024-11-13 → 2024-12-02 (+19d) |  |  |
| 62 | Relatório de Atividades Atrasadas | 2024-11-08 → 2024-11-27 (+19d) | 2024-11-12 → 2024-11-29 (+17d) |  |  |
| 63 | Realizar Testes | 2024-11-12 → 2024-11-29 (+17d) | 2024-11-12 → 2024-12-02 (+20d) |  |  |
| 64 | Relatório de Participação dos Membros | 2024-11-08 → 2024-11-27 (+19d) | 2024-11-12 → 2024-12-02 (+20d) |  |  |
| 65 | Realizar Testes | 2024-11-12 → 2024-12-02 (+20d) | 2024-11-13 → 2024-12-02 (+19d) |  |  |
| 66 | **Monitoramento de Controle** | 2024-11-13 → 2024-12-02 (+19d) | 2024-11-14 → 2024-12-03 (+19d) |  |  |
| 67 | Status Report | 2024-11-13 → 2024-12-02 (+19d) | 2024-11-14 → 2024-12-03 (+19d) |  |  |
| 68 | Atualizar Cronograma | 2024-11-13 → 2024-12-02 (+19d) | 2024-11-14 → 2024-12-03 (+19d) |  |  |
| 69 | **Gerência de Configuração** | 2024-11-14 → 2024-12-03 (+19d) | 2024-11-14 → 2024-12-04 (+20d) |  |  |
| 70 | Gerar nova Tag de Configuração | 2024-11-14 → 2024-12-03 (+19d) | 2024-11-14 → 2024-12-04 (+20d) |  |  |
| 71 | **Fechamento** | 2024-11-14 → 2024-12-04 (+20d) | 2024-11-26 → 2024-12-16 (+20d) |  |  |
| 72 | Apresentação do projeto ao cliente | 2024-11-14 → 2024-12-04 (+20d) | 2024-11-18 → 2024-12-06 (+18d) |  |  |
| 73 | Entrega do projeto ao cliente | 2024-11-18 → 2024-12-06 (+18d) | 2024-11-20 → 2024-12-10 (+20d) |  |  |
| 74 | Implantação do sistema | 2024-11-20 → 2024-12-10 (+20d) | 2024-11-26 → 2024-12-16 (+20d) |  |  |
| 75 | Finalização | 2024-11-26 → 2024-12-16 (+20d) | 2024-11-26 → 2024-12-16 (+20d) |  |  |

## Version 5 (saved 2024-11-10)

Note of the change: Update Cronograma

Last finish 2024-12-16 → 2024-12-13 (-3d).

Removed: 34 Status Report; 45 Status Report; 56 Status Report; 67 Status Report

Changed:

| ID | Task | Start | Finish | Duration | Complete | Predecessors | Other |
| --- | --- | --- | --- | --- | --- | --- | --- |
| 1 | **ProjetoIZZY** |  | 2024-12-16 → 2024-12-13 (-3d) | 70.03d? → 69.03d? | 44% → 46% |  |  |
| 26 | **Desenvolvimento** |  | 2024-12-04 → 2024-12-03 (-1d) | 33.15d? → 32.15d? |  |  |  |
| 36 | Gerar nova Tag de Configuração |  |  |  |  | 34, Status Report → 34 |  |
| 37 | **Sprint 2** |  | 2024-11-25 → 2024-11-22 (-3d) | 11.85d? → 10.85d? |  |  |  |
| 43 | **Monitoramento de Controle** |  | 2024-11-25 → 2024-11-22 (-3d) | 2d? → 1d? |  |  |  |
| 44 | Atualizar Cronograma | 2024-11-22 → 2024-11-21 (-1d) | 2024-11-25 → 2024-11-22 (-3d) |  |  | Status Report → 42 |  |
| 45 | **Gerência de Configuração** | 2024-11-25 → 2024-11-22 (-3d) | 2024-11-25 → 2024-11-22 (-3d) |  |  |  |  |
| 46 | Gerar nova Tag de Configuração | 2024-11-25 → 2024-11-22 (-3d) | 2024-11-25 → 2024-11-22 (-3d) |  |  | 44, Status Report → 44 |  |
| 47 | **Sprint 3** | 2024-11-25 → 2024-11-22 (-3d) | 2024-11-28 → 2024-11-27 (-1d) |  |  |  |  |
| 48 | **Implementação** | 2024-11-25 → 2024-11-22 (-3d) | 2024-11-28 → 2024-11-27 (-1d) |  |  |  |  |
| 49 | Manter Fotos | 2024-11-25 → 2024-11-22 (-3d) | 2024-11-27 → 2024-11-26 (-1d) |  |  |  |  |
| 50 | Realizar Testes |  | 2024-11-26 → 2024-11-27 (+1d) | 0.25d? → 0.5d? |  | 51 → 49 | baseline start 2024-11-05 → 2024-11-06; baseline finish 2024-11-05 → 2024-11-07 |
| 51 | Relatório de Atividades | 2024-11-25 → 2024-11-22 (-3d) | 2024-11-26 → 2024-11-25 (-1d) |  |  |  |  |
| 52 | Realizar Testes | 2024-11-27 → 2024-11-25 (-2d) | 2024-11-28 → 2024-11-25 (-3d) | 0.5d? → 0.25d? |  | 49 → 51 | baseline start 2024-11-06 → 2024-11-05; baseline finish 2024-11-07 → 2024-11-05 |
| 53 | **Monitoramento de Controle** | 2024-11-26 → 2024-11-25 (-1d) | 2024-11-27 → 2024-11-26 (-1d) |  |  |  |  |
| 54 | Atualizar Cronograma | 2024-11-26 → 2024-11-25 (-1d) | 2024-11-27 → 2024-11-26 (-1d) |  |  | 50 → 52 |  |
| 55 | **Gerência de Configuração** | 2024-11-27 → 2024-11-26 (-1d) | 2024-11-27 → 2024-11-26 (-1d) |  |  |  |  |
| 56 | Gerar nova Tag de Configuração | 2024-11-27 → 2024-11-26 (-1d) | 2024-11-27 → 2024-11-26 (-1d) |  |  | Status Report, 54 → 54 |  |
| 57 | **Sprint 4** | 2024-11-27 → 2024-11-26 (-1d) | 2024-12-04 → 2024-12-03 (-1d) |  |  |  |  |
| 58 | **Implementação** | 2024-11-27 → 2024-11-26 (-1d) | 2024-12-02 → 2024-11-29 (-3d) |  |  |  |  |
| 59 | Relatório de Atividades Atrasadas | 2024-11-27 → 2024-11-26 (-1d) | 2024-11-29 → 2024-11-28 (-1d) |  |  |  |  |
| 60 | Realizar Testes | 2024-11-29 → 2024-11-28 (-1d) | 2024-12-02 → 2024-11-29 (-3d) |  |  |  |  |
| 61 | Relatório de Participação dos Membros | 2024-11-27 → 2024-11-26 (-1d) | 2024-12-02 → 2024-11-29 (-3d) |  |  |  |  |
| 62 | Realizar Testes | 2024-12-02 → 2024-11-29 (-3d) | 2024-12-02 → 2024-11-29 (-3d) |  |  |  |  |
| 63 | **Monitoramento de Controle** | 2024-12-02 → 2024-11-29 (-3d) | 2024-12-03 → 2024-12-02 (-1d) |  |  |  |  |
| 64 | Atualizar Cronograma | 2024-12-02 → 2024-11-29 (-3d) | 2024-12-03 → 2024-12-02 (-1d) |  |  |  |  |
| 65 | **Gerência de Configuração** | 2024-12-03 → 2024-12-02 (-1d) | 2024-12-04 → 2024-12-03 (-1d) |  |  |  |  |
| 66 | Gerar nova Tag de Configuração | 2024-12-03 → 2024-12-02 (-1d) | 2024-12-04 → 2024-12-03 (-1d) |  |  | Status Report, 64 → 64 |  |
| 67 | **Fechamento** | 2024-12-04 → 2024-12-03 (-1d) | 2024-12-16 → 2024-12-13 (-3d) |  |  |  |  |
| 68 | Apresentação do projeto ao cliente | 2024-12-04 → 2024-12-03 (-1d) | 2024-12-06 → 2024-12-05 (-1d) |  |  |  |  |
| 69 | Entrega do projeto ao cliente | 2024-12-06 → 2024-12-05 (-1d) | 2024-12-10 → 2024-12-09 (-1d) |  |  |  |  |
| 70 | Implantação do sistema | 2024-12-10 → 2024-12-09 (-1d) | 2024-12-16 → 2024-12-13 (-3d) |  |  |  |  |
| 71 | Finalização | 2024-12-16 → 2024-12-13 (-3d) | 2024-12-16 → 2024-12-13 (-3d) |  |  |  |  |

## Version 6 (saved 2024-11-10)

Note of the change: Update cronograma

Last finish 2024-12-13 → 2024-12-18 (+5d). Complete tasks 17 → 23.

Changed:

| ID | Task | Start | Finish | Duration | Complete | Other |
| --- | --- | --- | --- | --- | --- | --- |
| 1 | **ProjetoIZZY** | 2024-09-09 → 2024-09-09 08:00 | 2024-12-13 → 2024-12-18 14:12 (+5d) | 69.03d? → 72.65d? | 46% → 62% | baseline start 2024-09-09 → 2024-09-09 08:00; baseline finish 2024-11-22 → 2024-11-22 15:12 |
| 2 | **Prospecção** | 2024-09-09 → 2024-09-09 08:00 | 2024-09-10 → 2024-09-10 10:00 |  |  | baseline start 2024-09-09 → 2024-09-09 08:00; baseline finish 2024-09-10 → 2024-09-10 10:00 |
| 3 | **PTEC** | 2024-09-09 → 2024-09-09 08:00 | 2024-09-10 → 2024-09-10 10:00 |  |  | baseline start 2024-09-09 → 2024-09-09 08:00; baseline finish 2024-09-10 → 2024-09-10 10:00 |
| 4 | Estudar o domínio de aplicaçao do sistema | 2024-09-09 → 2024-09-09 08:00 | 2024-09-10 → 2024-09-10 10:00 |  |  | baseline start 2024-09-09 → 2024-09-09 08:00; baseline finish 2024-09-10 → 2024-09-10 10:00 |
| 5 | Redigir PTE | 2024-09-09 → 2024-09-09 08:00 | 2024-09-10 → 2024-09-10 10:00 |  |  | baseline start 2024-09-09 → 2024-09-09 08:00; baseline finish 2024-09-10 → 2024-09-10 10:00 |
| 6 | Revisar PTE | 2024-09-09 → 2024-09-09 08:00 | 2024-09-09 → 2024-09-09 10:00 |  |  | baseline start 2024-09-09 → 2024-09-09 08:00; baseline finish 2024-09-09 → 2024-09-09 10:00 |
| 7 | **Est. Prel. Tam** | 2024-09-09 → 2024-09-09 08:00 | 2024-09-09 → 2024-09-09 17:00 |  |  | baseline start 2024-09-09 → 2024-09-09 08:00; baseline finish 2024-09-09 → 2024-09-09 17:00 |
| 8 | Estimar Tamanho do Projeto | 2024-09-09 → 2024-09-09 08:00 | 2024-09-09 → 2024-09-09 17:00 |  |  | baseline start 2024-09-09 → 2024-09-09 08:00; baseline finish 2024-09-09 → 2024-09-09 17:00 |
| 9 | Revisar Estimar Tamanho do Projeto | 2024-09-09 → 2024-09-09 08:00 | 2024-09-09 → 2024-09-09 10:00 |  |  | baseline start 2024-09-09 → 2024-09-09 08:00; baseline finish 2024-09-09 → 2024-09-09 10:00 |
| 10 | **Análise** | 2024-09-10 → 2024-09-10 10:00 | 2024-09-26 → 2024-09-26 11:00 |  |  | baseline start 2024-09-10 → 2024-09-10 10:00; baseline finish 2024-09-26 → 2024-09-26 11:00 |
| 11 | **DRE** | 2024-09-10 → 2024-09-10 10:00 | 2024-09-18 → 2024-09-18 10:00 |  |  | baseline start 2024-09-10 → 2024-09-10 10:00; baseline finish 2024-09-18 → 2024-09-18 10:00 |
| 12 | Levantar Requisitos do Sistema | 2024-09-10 → 2024-09-10 10:00 | 2024-09-12 → 2024-09-12 15:00 |  |  | baseline start 2024-09-10 → 2024-09-10 10:00; baseline finish 2024-09-12 → 2024-09-12 15:00 |
| 13 | Redigir DRE | 2024-09-12 → 2024-09-12 15:00 | 2024-09-17 → 2024-09-17 13:00 |  |  | baseline start 2024-09-12 → 2024-09-12 15:00; baseline finish 2024-09-17 → 2024-09-17 13:00 |
| 14 | Revisar DRE | 2024-09-17 → 2024-09-17 12:00 | 2024-09-18 → 2024-09-18 10:00 |  |  | baseline start 2024-09-17 → 2024-09-17 12:00; baseline finish 2024-09-18 → 2024-09-18 10:00 |
| 15 | **MRB** | 2024-09-18 → 2024-09-18 10:00 | 2024-09-26 → 2024-09-26 11:00 |  |  | baseline start 2024-09-18 → 2024-09-18 10:00; baseline finish 2024-09-26 → 2024-09-26 11:00 |
| 16 | Elaborar MRB | 2024-09-18 → 2024-09-18 10:00 | 2024-09-25 → 2024-09-25 16:00 |  |  | baseline start 2024-09-18 → 2024-09-18 10:00; baseline finish 2024-09-25 → 2024-09-25 16:00 |
| 17 | Revisar MRB | 2024-09-25 → 2024-09-25 16:00 | 2024-09-26 → 2024-09-26 11:00 |  |  | baseline start 2024-09-25 → 2024-09-25 16:00; baseline finish 2024-09-26 → 2024-09-26 11:00 |
| 18 | **Planejamento** | 2024-09-18 → 2024-09-18 10:00 | 2024-10-17 → 2024-10-17 16:00 |  |  | baseline start 2024-09-18 → 2024-09-18 10:00; baseline finish 2024-09-26 → 2024-09-26 14:00 |
| 19 | Desenvolver Plano de Projeto | 2024-09-18 → 2024-09-18 10:00 | 2024-09-18 → 2024-09-18 13:00 |  |  | baseline start 2024-09-18 → 2024-09-18 10:00; baseline finish 2024-09-18 → 2024-09-18 13:00 |
| 20 | Elaborar Estimativa de Tamanho/Esforço | 2024-09-18 → 2024-09-18 10:00 | 2024-09-18 → 2024-09-18 13:00 |  |  | baseline start 2024-09-18 → 2024-09-18 10:00; baseline finish 2024-09-18 → 2024-09-18 13:00 |
| 21 | Revisar Est. de Tamanho/Esforço | 2024-09-18 → 2024-09-18 12:00 | 2024-09-18 → 2024-09-18 14:00 |  |  | baseline start 2024-09-18 → 2024-09-18 12:00; baseline finish 2024-09-18 → 2024-09-18 14:00 |
| 22 | Elaborar Cronograma | 2024-09-18 → 2024-09-18 12:00 | 2024-09-19 → 2024-09-19 13:00 |  |  | baseline start 2024-09-18 → 2024-09-18 12:00; baseline finish 2024-09-19 → 2024-09-19 13:00 |
| 23 | Revisar Cronograma | 2024-09-19 → 2024-09-19 12:00 | 2024-09-19 → 2024-09-19 14:00 |  |  | baseline start 2024-09-19 → 2024-09-19 12:00; baseline finish 2024-09-19 → 2024-09-19 14:00 |
| 24 | Elaborar Protótipo | 2024-09-18 → 2024-09-18 10:00 | 2024-10-04 → 2024-10-04 17:00 |  |  | baseline start 2024-09-18 → 2024-09-18 10:00; baseline finish 2024-09-26 → 2024-09-26 13:00 |
| 25 | Revisar Protótipo | 2024-09-30 → 2024-09-30 08:00 | 2024-10-17 → 2024-10-17 16:00 |  |  | baseline start 2024-09-26 → 2024-09-26 13:00; baseline finish 2024-09-26 → 2024-09-26 14:00 |
| 26 | **Desenvolvimento** | 2024-10-17 → 2024-10-17 16:00 | 2024-12-03 → 2024-12-06 14:12 (+3d) | 32.15d? → 35.77d? | 0% → 38% | baseline start 2024-09-26 → 2024-09-26 14:00; baseline finish 2024-11-12 → 2024-11-12 15:12 |
| 27 | **Sprint 1** | 2024-10-17 → 2024-10-17 16:00 | 2024-11-07 → 2024-11-13 08:48 (+6d) | 14.6d? → 18.23d? | 0% → 100% | baseline start 2024-09-26 → 2024-09-26 14:00; baseline finish 2024-10-17 → 2024-10-17 09:48 |
| 28 | **Implementação** | 2024-10-17 → 2024-10-17 16:00 | 2024-11-06 → 2024-11-12 08:00 (+6d) | 13.5d? → 17.12d? | 0% → 100% | baseline start 2024-09-26 → 2024-09-26 14:00; baseline finish 2024-10-16 → 2024-10-16 09:00 |
| 29 | Manter Usuários | 2024-10-17 → 2024-10-17 16:00 | 2024-10-24 → 2024-11-08 17:00 (+15d) | 5d? → 16.12d? | 0% → 100% | baseline start 2024-09-26 → 2024-09-26 14:00; baseline finish 2024-10-03 → 2024-10-03 14:00 |
| 30 | Realizar Testes | 2024-10-24 → 2024-11-11 08:00 (+18d) | 2024-10-25 → 2024-11-11 08:00 (+17d) | 1d → 0d | 0% → 100% | baseline start 2024-10-03 → 2024-10-03 14:00; baseline finish 2024-10-04 → 2024-10-04 14:00 |
| 31 | Manter IZZY's | 2024-10-25 → 2024-11-11 08:00 (+17d) | 2024-11-05 → 2024-11-11 17:00 (+6d) | 6.25d? → 1d? | 0% → 100% | baseline start 2024-10-04 → 2024-10-04 14:00; baseline finish 2024-10-14 → 2024-10-14 16:00 |
| 32 | Realizar Testes | 2024-11-05 → 2024-11-12 08:00 (+7d) | 2024-11-06 → 2024-11-12 08:00 (+6d) | 1.25d? → 0d? | 0% → 100% | constraint none → start no earlier than 2024-11-11 08:00; baseline start 2024-10-14 → 2024-10-14 16:00; baseline finish 2024-10-16 → 2024-10-16 09:00 |
| 33 | **Monitoramento e Controle** | 2024-11-06 → 2024-11-12 08:00 (+6d) | 2024-11-07 → 2024-11-12 17:00 (+5d) |  | 0% → 100% | baseline start 2024-10-16 → 2024-10-16 09:00; baseline finish 2024-10-17 → 2024-10-17 09:00 |
| 34 | Atualizar Cronograma | 2024-11-06 → 2024-11-12 08:00 (+6d) | 2024-11-07 → 2024-11-12 17:00 (+5d) |  | 0% → 100% | baseline start 2024-10-16 → 2024-10-16 09:00; baseline finish 2024-10-17 → 2024-10-17 09:00 |
| 35 | **Gerência de Configuração** | 2024-11-07 → 2024-11-13 08:00 (+6d) | 2024-11-07 → 2024-11-13 08:48 (+6d) |  | 0% → 100% | baseline start 2024-10-17 → 2024-10-17 09:00; baseline finish 2024-10-17 → 2024-10-17 09:48 |
| 36 | Gerar nova Tag de Configuração | 2024-11-07 → 2024-11-13 08:00 (+6d) | 2024-11-07 → 2024-11-13 08:48 (+6d) |  | 0% → 100% | baseline start 2024-10-17 → 2024-10-17 09:00; baseline finish 2024-10-17 → 2024-10-17 09:48 |
| 37 | **Sprint 2** | 2024-11-07 → 2024-11-13 08:48 (+6d) | 2024-11-22 → 2024-11-27 16:36 (+5d) |  |  | baseline start 2024-10-17 → 2024-10-17 09:48; baseline finish 2024-11-04 → 2024-11-04 08:36 |
| 38 | **Implementação** | 2024-11-07 → 2024-11-13 08:48 (+6d) | 2024-11-21 → 2024-11-26 15:48 (+5d) |  |  | baseline start 2024-10-17 → 2024-10-17 09:48; baseline finish 2024-10-30 → 2024-10-30 16:48 |
| 39 | Manter Membros de um IZZY | 2024-11-07 → 2024-11-13 08:48 (+6d) | 2024-11-15 → 2024-11-21 10:48 (+6d) |  |  | baseline start 2024-10-17 → 2024-10-17 09:48; baseline finish 2024-10-25 → 2024-10-25 11:48 |
| 40 | Realizar Testes | 2024-11-15 → 2024-11-21 10:48 (+6d) | 2024-11-18 → 2024-11-22 13:48 (+4d) |  |  | baseline start 2024-10-25 → 2024-10-25 11:48; baseline finish 2024-10-28 → 2024-10-28 14:48 |
| 41 | Manter Atividades | 2024-11-07 → 2024-11-13 08:48 (+6d) | 2024-11-19 → 2024-11-25 09:48 (+6d) |  |  | baseline start 2024-10-17 → 2024-10-17 09:48; baseline finish 2024-10-29 → 2024-10-29 10:48 |
| 42 | Realizar Testes | 2024-11-19 → 2024-11-25 09:48 (+6d) | 2024-11-21 → 2024-11-26 15:48 (+5d) |  |  | baseline start 2024-10-29 → 2024-10-29 10:48; baseline finish 2024-10-30 → 2024-10-30 16:48 |
| 43 | **Monitoramento de Controle** | 2024-11-21 → 2024-11-26 15:48 (+5d) | 2024-11-22 → 2024-11-27 15:48 (+5d) |  |  | baseline start 2024-10-30 → 2024-10-30 16:48; baseline finish 2024-11-01 → 2024-11-01 16:48 |
| 44 | Atualizar Cronograma | 2024-11-21 → 2024-11-26 15:48 (+5d) | 2024-11-22 → 2024-11-27 15:48 (+5d) |  |  | baseline start 2024-10-31 → 2024-10-31 16:48; baseline finish 2024-11-01 → 2024-11-01 16:48 |
| 45 | **Gerência de Configuração** | 2024-11-22 → 2024-11-27 15:48 (+5d) | 2024-11-22 → 2024-11-27 16:36 (+5d) |  |  | baseline start 2024-11-01 → 2024-11-01 16:48; baseline finish 2024-11-04 → 2024-11-04 08:36 |
| 46 | Gerar nova Tag de Configuração | 2024-11-22 → 2024-11-27 15:48 (+5d) | 2024-11-22 → 2024-11-27 16:36 (+5d) |  |  | baseline start 2024-11-01 → 2024-11-01 16:48; baseline finish 2024-11-04 → 2024-11-04 08:36 |
| 47 | **Sprint 3** | 2024-11-22 → 2024-11-27 16:36 (+5d) | 2024-11-27 → 2024-12-02 16:36 (+5d) |  |  | baseline start 2024-11-04 → 2024-11-04 08:36; baseline finish 2024-11-07 → 2024-11-07 08:36 |
| 48 | **Implementação** | 2024-11-22 → 2024-11-27 16:36 (+5d) | 2024-11-27 → 2024-12-02 16:36 (+5d) |  |  | baseline start 2024-11-04 → 2024-11-04 08:36; baseline finish 2024-11-07 → 2024-11-07 08:36 |
| 49 | Manter Fotos | 2024-11-22 → 2024-11-27 16:36 (+5d) | 2024-11-26 → 2024-12-02 11:36 (+6d) |  |  | baseline start 2024-11-04 → 2024-11-04 08:36; baseline finish 2024-11-06 → 2024-11-06 13:36 |
| 50 | Realizar Testes | 2024-11-26 → 2024-12-02 11:36 (+6d) | 2024-11-27 → 2024-12-02 16:36 (+5d) |  |  | baseline start 2024-11-06 → 2024-11-06 13:36; baseline finish 2024-11-07 → 2024-11-07 08:36 |
| 51 | Relatório de Atividades | 2024-11-22 → 2024-11-27 16:36 (+5d) | 2024-11-25 → 2024-11-29 09:36 (+4d) |  |  | baseline start 2024-11-04 → 2024-11-04 08:36; baseline finish 2024-11-05 → 2024-11-05 10:36 |
| 52 | Realizar Testes | 2024-11-25 → 2024-11-29 09:36 (+4d) | 2024-11-25 → 2024-11-29 11:36 (+4d) |  |  | baseline start 2024-11-05 → 2024-11-05 10:36; baseline finish 2024-11-05 → 2024-11-05 13:36 |
| 53 | **Monitoramento de Controle** | 2024-11-25 → 2024-11-29 11:36 (+4d) | 2024-11-26 → 2024-12-02 11:36 (+6d) |  |  | baseline start 2024-11-05 → 2024-11-05 13:36; baseline finish 2024-11-06 → 2024-11-06 13:36 |
| 54 | Atualizar Cronograma | 2024-11-25 → 2024-11-29 11:36 (+4d) | 2024-11-26 → 2024-12-02 11:36 (+6d) |  |  | baseline start 2024-11-05 → 2024-11-05 13:36; baseline finish 2024-11-06 → 2024-11-06 13:36 |
| 55 | **Gerência de Configuração** | 2024-11-26 → 2024-12-02 11:36 (+6d) | 2024-11-26 → 2024-12-02 13:24 (+6d) |  |  | baseline start 2024-11-06 → 2024-11-06 13:36; baseline finish 2024-11-06 → 2024-11-06 14:24 |
| 56 | Gerar nova Tag de Configuração | 2024-11-26 → 2024-12-02 11:36 (+6d) | 2024-11-26 → 2024-12-02 13:24 (+6d) |  |  | baseline start 2024-11-06 → 2024-11-06 13:36; baseline finish 2024-11-06 → 2024-11-06 14:24 |
| 57 | **Sprint 4** | 2024-11-26 → 2024-12-02 13:24 (+6d) | 2024-12-03 → 2024-12-06 14:12 (+3d) |  |  | baseline start 2024-11-06 → 2024-11-06 14:24; baseline finish 2024-11-12 → 2024-11-12 15:12 |
| 58 | **Implementação** | 2024-11-26 → 2024-12-02 13:24 (+6d) | 2024-11-29 → 2024-12-05 13:24 (+6d) |  |  | baseline start 2024-11-06 → 2024-11-06 14:24; baseline finish 2024-11-11 → 2024-11-11 14:24 |
| 59 | Relatório de Atividades Atrasadas | 2024-11-26 → 2024-12-02 13:24 (+6d) | 2024-11-28 → 2024-12-04 11:24 (+6d) |  |  | baseline start 2024-11-06 → 2024-11-06 14:24; baseline finish 2024-11-08 → 2024-11-08 13:24 |
| 60 | Realizar Testes | 2024-11-28 → 2024-12-04 11:24 (+6d) | 2024-11-29 → 2024-12-04 15:24 (+5d) |  |  | baseline start 2024-11-08 → 2024-11-08 13:24; baseline finish 2024-11-08 → 2024-11-08 16:24 |
| 61 | Relatório de Participação dos Membros | 2024-11-26 → 2024-12-02 13:24 (+6d) | 2024-11-29 → 2024-12-05 08:24 (+6d) |  |  | baseline start 2024-11-06 → 2024-11-06 14:24; baseline finish 2024-11-11 → 2024-11-11 09:24 |
| 62 | Realizar Testes | 2024-11-29 → 2024-12-05 08:24 (+6d) | 2024-11-29 → 2024-12-05 13:24 (+6d) |  |  | baseline start 2024-11-11 → 2024-11-11 09:24; baseline finish 2024-11-11 → 2024-11-11 14:24 |
| 63 | **Monitoramento de Controle** | 2024-11-29 → 2024-12-05 13:24 (+6d) | 2024-12-02 → 2024-12-06 13:24 (+4d) |  |  | baseline start 2024-11-11 → 2024-11-11 14:24; baseline finish 2024-11-12 → 2024-11-12 14:24 |
| 64 | Atualizar Cronograma | 2024-11-29 → 2024-12-05 13:24 (+6d) | 2024-12-02 → 2024-12-06 13:24 (+4d) |  |  | baseline start 2024-11-11 → 2024-11-11 14:24; baseline finish 2024-11-12 → 2024-11-12 14:24 |
| 65 | **Gerência de Configuração** | 2024-12-02 → 2024-12-06 13:24 (+4d) | 2024-12-03 → 2024-12-06 14:12 (+3d) |  |  | baseline start 2024-11-12 → 2024-11-12 14:24; baseline finish 2024-11-12 → 2024-11-12 15:12 |
| 66 | Gerar nova Tag de Configuração | 2024-12-02 → 2024-12-06 13:24 (+4d) | 2024-12-03 → 2024-12-06 14:12 (+3d) |  |  | baseline start 2024-11-12 → 2024-11-12 14:24; baseline finish 2024-11-12 → 2024-11-12 15:12 |
| 67 | **Fechamento** | 2024-12-03 → 2024-12-06 14:12 (+3d) | 2024-12-13 → 2024-12-18 14:12 (+5d) |  |  | baseline start 2024-11-12 → 2024-11-12 15:12; baseline finish 2024-11-22 → 2024-11-22 15:12 |
| 68 | Apresentação do projeto ao cliente | 2024-12-03 → 2024-12-06 14:12 (+3d) | 2024-12-05 → 2024-12-10 14:12 (+5d) |  |  | baseline start 2024-11-12 → 2024-11-12 15:12; baseline finish 2024-11-14 → 2024-11-14 15:12 |
| 69 | Entrega do projeto ao cliente | 2024-12-05 → 2024-12-10 14:12 (+5d) | 2024-12-09 → 2024-12-12 14:12 (+3d) |  |  | baseline start 2024-11-14 → 2024-11-14 15:12; baseline finish 2024-11-18 → 2024-11-18 15:12 |
| 70 | Implantação do sistema | 2024-12-09 → 2024-12-12 14:12 (+3d) | 2024-12-13 → 2024-12-18 14:12 (+5d) |  |  | baseline start 2024-11-18 → 2024-11-18 15:12; baseline finish 2024-11-22 → 2024-11-22 15:12 |

| ID | Task | Start | Finish | Other |
| --- | --- | --- | --- | --- |
| 71 | Finalização | 2024-12-13 → 2024-12-18 14:12 (+5d) | 2024-12-13 → 2024-12-18 14:12 (+5d) | constraint start no earlier than 2024-09-09 → start no earlier than 2024-09-09 08:00; baseline start 2024-11-22 → 2024-11-22 15:12; baseline finish 2024-11-22 → 2024-11-22 15:12 |

## Version 7 (saved 2024-11-11)

Note of the change: Update Cronograma

Last finish 2024-12-18 → 2024-12-17 (-1d).

Changed:

| ID | Task | Start | Finish | Duration | Complete | Other |
| --- | --- | --- | --- | --- | --- | --- |
| 1 | **ProjetoIZZY** | 2024-09-09 08:00 → 2024-09-09 | 2024-12-18 14:12 → 2024-12-17 (-1d) | 72.65d? → 71.11d? | 62% → 61% | baseline start 2024-09-09 08:00 → 2024-09-09; baseline finish 2024-11-22 15:12 → 2024-11-22 |
| 2 | **Prospecção** | 2024-09-09 08:00 → 2024-09-09 | 2024-09-10 10:00 → 2024-09-10 |  |  | baseline start 2024-09-09 08:00 → 2024-09-09; baseline finish 2024-09-10 10:00 → 2024-09-10 |
| 3 | **PTEC** | 2024-09-09 08:00 → 2024-09-09 | 2024-09-10 10:00 → 2024-09-10 |  |  | baseline start 2024-09-09 08:00 → 2024-09-09; baseline finish 2024-09-10 10:00 → 2024-09-10 |
| 4 | Estudar o domínio de aplicaçao do sistema | 2024-09-09 08:00 → 2024-09-09 | 2024-09-10 10:00 → 2024-09-10 |  |  | baseline start 2024-09-09 08:00 → 2024-09-09; baseline finish 2024-09-10 10:00 → 2024-09-10 |
| 5 | Redigir PTE | 2024-09-09 08:00 → 2024-09-09 | 2024-09-10 10:00 → 2024-09-10 |  |  | baseline start 2024-09-09 08:00 → 2024-09-09; baseline finish 2024-09-10 10:00 → 2024-09-10 |
| 6 | Revisar PTE | 2024-09-09 08:00 → 2024-09-09 | 2024-09-09 10:00 → 2024-09-09 |  |  | baseline start 2024-09-09 08:00 → 2024-09-09; baseline finish 2024-09-09 10:00 → 2024-09-09 |
| 7 | **Est. Prel. Tam** | 2024-09-09 08:00 → 2024-09-09 | 2024-09-09 17:00 → 2024-09-09 |  |  | baseline start 2024-09-09 08:00 → 2024-09-09; baseline finish 2024-09-09 17:00 → 2024-09-09 |
| 8 | Estimar Tamanho do Projeto | 2024-09-09 08:00 → 2024-09-09 | 2024-09-09 17:00 → 2024-09-09 |  |  | baseline start 2024-09-09 08:00 → 2024-09-09; baseline finish 2024-09-09 17:00 → 2024-09-09 |
| 9 | Revisar Estimar Tamanho do Projeto | 2024-09-09 08:00 → 2024-09-09 | 2024-09-09 10:00 → 2024-09-09 |  |  | baseline start 2024-09-09 08:00 → 2024-09-09; baseline finish 2024-09-09 10:00 → 2024-09-09 |
| 10 | **Análise** | 2024-09-10 10:00 → 2024-09-10 | 2024-09-26 11:00 → 2024-09-26 |  |  | baseline start 2024-09-10 10:00 → 2024-09-10; baseline finish 2024-09-26 11:00 → 2024-09-26 |
| 11 | **DRE** | 2024-09-10 10:00 → 2024-09-10 | 2024-09-18 10:00 → 2024-09-18 |  |  | baseline start 2024-09-10 10:00 → 2024-09-10; baseline finish 2024-09-18 10:00 → 2024-09-18 |
| 12 | Levantar Requisitos do Sistema | 2024-09-10 10:00 → 2024-09-10 | 2024-09-12 15:00 → 2024-09-12 |  |  | baseline start 2024-09-10 10:00 → 2024-09-10; baseline finish 2024-09-12 15:00 → 2024-09-12 |
| 13 | Redigir DRE | 2024-09-12 15:00 → 2024-09-12 | 2024-09-17 13:00 → 2024-09-17 |  |  | baseline start 2024-09-12 15:00 → 2024-09-12; baseline finish 2024-09-17 13:00 → 2024-09-17 |
| 14 | Revisar DRE | 2024-09-17 12:00 → 2024-09-17 | 2024-09-18 10:00 → 2024-09-18 |  |  | baseline start 2024-09-17 12:00 → 2024-09-17; baseline finish 2024-09-18 10:00 → 2024-09-18 |
| 15 | **MRB** | 2024-09-18 10:00 → 2024-09-18 | 2024-09-26 11:00 → 2024-09-26 |  |  | baseline start 2024-09-18 10:00 → 2024-09-18; baseline finish 2024-09-26 11:00 → 2024-09-26 |
| 16 | Elaborar MRB | 2024-09-18 10:00 → 2024-09-18 | 2024-09-25 16:00 → 2024-09-25 |  |  | baseline start 2024-09-18 10:00 → 2024-09-18; baseline finish 2024-09-25 16:00 → 2024-09-25 |
| 17 | Revisar MRB | 2024-09-25 16:00 → 2024-09-25 | 2024-09-26 11:00 → 2024-09-26 |  |  | baseline start 2024-09-25 16:00 → 2024-09-25; baseline finish 2024-09-26 11:00 → 2024-09-26 |
| 18 | **Planejamento** | 2024-09-18 10:00 → 2024-09-18 | 2024-10-17 16:00 → 2024-10-17 |  |  | baseline start 2024-09-18 10:00 → 2024-09-18; baseline finish 2024-09-26 14:00 → 2024-09-26 |
| 19 | Desenvolver Plano de Projeto | 2024-09-18 10:00 → 2024-09-18 | 2024-09-18 13:00 → 2024-09-18 |  |  | baseline start 2024-09-18 10:00 → 2024-09-18; baseline finish 2024-09-18 13:00 → 2024-09-18 |
| 20 | Elaborar Estimativa de Tamanho/Esforço | 2024-09-18 10:00 → 2024-09-18 | 2024-09-18 13:00 → 2024-09-18 |  |  | baseline start 2024-09-18 10:00 → 2024-09-18; baseline finish 2024-09-18 13:00 → 2024-09-18 |
| 21 | Revisar Est. de Tamanho/Esforço | 2024-09-18 12:00 → 2024-09-18 | 2024-09-18 14:00 → 2024-09-18 |  |  | baseline start 2024-09-18 12:00 → 2024-09-18; baseline finish 2024-09-18 14:00 → 2024-09-18 |
| 22 | Elaborar Cronograma | 2024-09-18 12:00 → 2024-09-18 | 2024-09-19 13:00 → 2024-09-19 |  |  | baseline start 2024-09-18 12:00 → 2024-09-18; baseline finish 2024-09-19 13:00 → 2024-09-19 |
| 23 | Revisar Cronograma | 2024-09-19 12:00 → 2024-09-19 | 2024-09-19 14:00 → 2024-09-19 |  |  | baseline start 2024-09-19 12:00 → 2024-09-19; baseline finish 2024-09-19 14:00 → 2024-09-19 |
| 24 | Elaborar Protótipo | 2024-09-18 10:00 → 2024-09-18 | 2024-10-04 17:00 → 2024-10-04 |  |  | baseline start 2024-09-18 10:00 → 2024-09-18; baseline finish 2024-09-26 13:00 → 2024-09-26 |
| 25 | Revisar Protótipo | 2024-09-30 08:00 → 2024-09-30 | 2024-10-17 16:00 → 2024-10-17 |  |  | baseline start 2024-09-26 13:00 → 2024-09-26; baseline finish 2024-09-26 14:00 → 2024-09-26 |
| 26 | **Desenvolvimento** | 2024-10-17 16:00 → 2024-10-17 | 2024-12-06 14:12 → 2024-12-05 (-1d) | 35.77d? → 34.24d? | 38% → 35% | baseline start 2024-09-26 14:00 → 2024-09-26; baseline finish 2024-11-12 15:12 → 2024-11-12 |
| 27 | **Sprint 1** | 2024-10-17 16:00 → 2024-10-17 | 2024-11-13 08:48 → 2024-11-11 (-2d) | 18.23d? → 16.69d? |  | baseline start 2024-09-26 14:00 → 2024-09-26; baseline finish 2024-10-17 09:48 → 2024-10-17 |
| 28 | **Implementação** | 2024-10-17 16:00 → 2024-10-17 | 2024-11-12 08:00 → 2024-11-11 (-1d) | 17.12d? → 16.38d? |  | baseline start 2024-09-26 14:00 → 2024-09-26; baseline finish 2024-10-16 09:00 → 2024-10-16 |
| 29 | Manter Usuários | 2024-10-17 16:00 → 2024-10-17 | 2024-11-08 17:00 → 2024-11-07 (-1d) | 16.12d? → 15d? |  | baseline start 2024-09-26 14:00 → 2024-09-26; baseline finish 2024-10-03 14:00 → 2024-10-03 |
| 30 | Realizar Testes | 2024-11-11 08:00 → 2024-11-08 (-3d) | 2024-11-11 08:00 → 2024-11-08 (-3d) | 0d → 0.12d |  | constraint none → start no earlier than 2024-11-08; baseline start 2024-10-03 14:00 → 2024-10-03; baseline finish 2024-10-04 14:00 → 2024-10-04 |
| 31 | Manter IZZY's | 2024-11-11 08:00 → 2024-11-08 (-3d) | 2024-11-11 17:00 → 2024-11-11 |  |  | baseline start 2024-10-04 14:00 → 2024-10-04; baseline finish 2024-10-14 16:00 → 2024-10-14 |
| 32 | Realizar Testes | 2024-11-12 08:00 → 2024-11-11 (-1d) | 2024-11-12 08:00 → 2024-11-11 (-1d) | 0d? → 0.12d? |  | constraint start no earlier than 2024-11-11 08:00 → start no earlier than 2024-11-11; baseline start 2024-10-14 16:00 → 2024-10-14; baseline finish 2024-10-16 09:00 → 2024-10-16 |
| 33 | **Monitoramento e Controle** | 2024-11-12 08:00 → 2024-11-11 (-1d) | 2024-11-12 17:00 → 2024-11-11 (-1d) | 1d? → 0.25d? |  | baseline start 2024-10-16 09:00 → 2024-10-16; baseline finish 2024-10-17 09:00 → 2024-10-17 |
| 34 | Atualizar Cronograma | 2024-11-12 08:00 → 2024-11-11 (-1d) | 2024-11-12 17:00 → 2024-11-11 (-1d) | 1d? → 0.25d? |  | baseline start 2024-10-16 09:00 → 2024-10-16; baseline finish 2024-10-17 09:00 → 2024-10-17 |
| 35 | **Gerência de Configuração** | 2024-11-13 08:00 → 2024-11-11 (-2d) | 2024-11-13 08:48 → 2024-11-11 (-2d) | 0.1d? → 0.06d? |  | baseline start 2024-10-17 09:00 → 2024-10-17; baseline finish 2024-10-17 09:48 → 2024-10-17 |
| 36 | Gerar nova Tag de Configuração | 2024-11-13 08:00 → 2024-11-11 (-2d) | 2024-11-13 08:48 → 2024-11-11 (-2d) | 0.1d? → 0.06d? |  | baseline start 2024-10-17 09:00 → 2024-10-17; baseline finish 2024-10-17 09:48 → 2024-10-17 |
| 37 | **Sprint 2** | 2024-11-13 08:48 → 2024-11-11 (-2d) | 2024-11-27 16:36 → 2024-11-26 (-1d) |  |  | baseline start 2024-10-17 09:48 → 2024-10-17; baseline finish 2024-11-04 08:36 → 2024-11-04 |
| 38 | **Implementação** | 2024-11-13 08:48 → 2024-11-11 (-2d) | 2024-11-26 15:48 → 2024-11-25 (-1d) |  |  | baseline start 2024-10-17 09:48 → 2024-10-17; baseline finish 2024-10-30 16:48 → 2024-10-30 |
| 39 | Manter Membros de um IZZY | 2024-11-13 08:48 → 2024-11-12 (-1d) | 2024-11-21 10:48 → 2024-11-20 (-1d) |  |  | constraint none → start no earlier than 2024-11-12; baseline start 2024-10-17 09:48 → 2024-10-17; baseline finish 2024-10-25 11:48 → 2024-10-25 |
| 40 | Realizar Testes | 2024-11-21 10:48 → 2024-11-20 (-1d) | 2024-11-22 13:48 → 2024-11-21 (-1d) |  |  | baseline start 2024-10-25 11:48 → 2024-10-25; baseline finish 2024-10-28 14:48 → 2024-10-28 |
| 41 | Manter Atividades | 2024-11-13 08:48 → 2024-11-11 (-2d) | 2024-11-25 09:48 → 2024-11-21 (-4d) |  |  | baseline start 2024-10-17 09:48 → 2024-10-17; baseline finish 2024-10-29 10:48 → 2024-10-29 |
| 42 | Realizar Testes | 2024-11-25 09:48 → 2024-11-21 (-4d) | 2024-11-26 15:48 → 2024-11-25 (-1d) |  |  | baseline start 2024-10-29 10:48 → 2024-10-29; baseline finish 2024-10-30 16:48 → 2024-10-30 |
| 43 | **Monitoramento de Controle** | 2024-11-26 15:48 → 2024-11-25 (-1d) | 2024-11-27 15:48 → 2024-11-26 (-1d) |  |  | baseline start 2024-10-30 16:48 → 2024-10-30; baseline finish 2024-11-01 16:48 → 2024-11-01 |
| 44 | Atualizar Cronograma | 2024-11-26 15:48 → 2024-11-25 (-1d) | 2024-11-27 15:48 → 2024-11-26 (-1d) |  |  | baseline start 2024-10-31 16:48 → 2024-10-31; baseline finish 2024-11-01 16:48 → 2024-11-01 |
| 45 | **Gerência de Configuração** | 2024-11-27 15:48 → 2024-11-26 (-1d) | 2024-11-27 16:36 → 2024-11-26 (-1d) |  |  | baseline start 2024-11-01 16:48 → 2024-11-01; baseline finish 2024-11-04 08:36 → 2024-11-04 |
| 46 | Gerar nova Tag de Configuração | 2024-11-27 15:48 → 2024-11-26 (-1d) | 2024-11-27 16:36 → 2024-11-26 (-1d) |  |  | baseline start 2024-11-01 16:48 → 2024-11-01; baseline finish 2024-11-04 08:36 → 2024-11-04 |
| 47 | **Sprint 3** | 2024-11-27 16:36 → 2024-11-26 (-1d) | 2024-12-02 16:36 → 2024-11-29 (-3d) |  |  | baseline start 2024-11-04 08:36 → 2024-11-04; baseline finish 2024-11-07 08:36 → 2024-11-07 |
| 48 | **Implementação** | 2024-11-27 16:36 → 2024-11-26 (-1d) | 2024-12-02 16:36 → 2024-11-29 (-3d) |  |  | baseline start 2024-11-04 08:36 → 2024-11-04; baseline finish 2024-11-07 08:36 → 2024-11-07 |
| 49 | Manter Fotos | 2024-11-27 16:36 → 2024-11-26 (-1d) | 2024-12-02 11:36 → 2024-11-28 (-4d) |  |  | baseline start 2024-11-04 08:36 → 2024-11-04; baseline finish 2024-11-06 13:36 → 2024-11-06 |
| 50 | Realizar Testes | 2024-12-02 11:36 → 2024-11-28 (-4d) | 2024-12-02 16:36 → 2024-11-29 (-3d) |  |  | baseline start 2024-11-06 13:36 → 2024-11-06; baseline finish 2024-11-07 08:36 → 2024-11-07 |
| 51 | Relatório de Atividades | 2024-11-27 16:36 → 2024-11-26 (-1d) | 2024-11-29 09:36 → 2024-11-27 (-2d) |  |  | baseline start 2024-11-04 08:36 → 2024-11-04; baseline finish 2024-11-05 10:36 → 2024-11-05 |
| 52 | Realizar Testes | 2024-11-29 09:36 → 2024-11-27 (-2d) | 2024-11-29 11:36 → 2024-11-27 (-2d) |  |  | baseline start 2024-11-05 10:36 → 2024-11-05; baseline finish 2024-11-05 13:36 → 2024-11-05 |
| 53 | **Monitoramento de Controle** | 2024-11-29 11:36 → 2024-11-27 (-2d) | 2024-12-02 11:36 → 2024-11-28 (-4d) |  |  | baseline start 2024-11-05 13:36 → 2024-11-05; baseline finish 2024-11-06 13:36 → 2024-11-06 |
| 54 | Atualizar Cronograma | 2024-11-29 11:36 → 2024-11-27 (-2d) | 2024-12-02 11:36 → 2024-11-28 (-4d) |  |  | baseline start 2024-11-05 13:36 → 2024-11-05; baseline finish 2024-11-06 13:36 → 2024-11-06 |
| 55 | **Gerência de Configuração** | 2024-12-02 11:36 → 2024-11-28 (-4d) | 2024-12-02 13:24 → 2024-11-29 (-3d) |  |  | baseline start 2024-11-06 13:36 → 2024-11-06; baseline finish 2024-11-06 14:24 → 2024-11-06 |
| 56 | Gerar nova Tag de Configuração | 2024-12-02 11:36 → 2024-11-28 (-4d) | 2024-12-02 13:24 → 2024-11-29 (-3d) |  |  | baseline start 2024-11-06 13:36 → 2024-11-06; baseline finish 2024-11-06 14:24 → 2024-11-06 |
| 57 | **Sprint 4** | 2024-12-02 13:24 → 2024-11-29 (-3d) | 2024-12-06 14:12 → 2024-12-05 (-1d) |  |  | baseline start 2024-11-06 14:24 → 2024-11-06; baseline finish 2024-11-12 15:12 → 2024-11-12 |
| 58 | **Implementação** | 2024-12-02 13:24 → 2024-11-29 (-3d) | 2024-12-05 13:24 → 2024-12-04 (-1d) |  |  | baseline start 2024-11-06 14:24 → 2024-11-06; baseline finish 2024-11-11 14:24 → 2024-11-11 |
| 59 | Relatório de Atividades Atrasadas | 2024-12-02 13:24 → 2024-11-29 (-3d) | 2024-12-04 11:24 → 2024-12-02 (-2d) |  |  | baseline start 2024-11-06 14:24 → 2024-11-06; baseline finish 2024-11-08 13:24 → 2024-11-08 |
| 60 | Realizar Testes | 2024-12-04 11:24 → 2024-12-02 (-2d) | 2024-12-04 15:24 → 2024-12-03 (-1d) |  |  | baseline start 2024-11-08 13:24 → 2024-11-08; baseline finish 2024-11-08 16:24 → 2024-11-08 |
| 61 | Relatório de Participação dos Membros | 2024-12-02 13:24 → 2024-11-29 (-3d) | 2024-12-05 08:24 → 2024-12-03 (-2d) |  |  | baseline start 2024-11-06 14:24 → 2024-11-06; baseline finish 2024-11-11 09:24 → 2024-11-11 |
| 62 | Realizar Testes | 2024-12-05 08:24 → 2024-12-03 (-2d) | 2024-12-05 13:24 → 2024-12-04 (-1d) |  |  | baseline start 2024-11-11 09:24 → 2024-11-11; baseline finish 2024-11-11 14:24 → 2024-11-11 |
| 63 | **Monitoramento de Controle** | 2024-12-05 13:24 → 2024-12-04 (-1d) | 2024-12-06 13:24 → 2024-12-05 (-1d) |  |  | baseline start 2024-11-11 14:24 → 2024-11-11; baseline finish 2024-11-12 14:24 → 2024-11-12 |
| 64 | Atualizar Cronograma | 2024-12-05 13:24 → 2024-12-04 (-1d) | 2024-12-06 13:24 → 2024-12-05 (-1d) |  |  | baseline start 2024-11-11 14:24 → 2024-11-11; baseline finish 2024-11-12 14:24 → 2024-11-12 |
| 65 | **Gerência de Configuração** | 2024-12-06 13:24 → 2024-12-05 (-1d) | 2024-12-06 14:12 → 2024-12-05 (-1d) |  |  | baseline start 2024-11-12 14:24 → 2024-11-12; baseline finish 2024-11-12 15:12 → 2024-11-12 |
| 66 | Gerar nova Tag de Configuração | 2024-12-06 13:24 → 2024-12-05 (-1d) | 2024-12-06 14:12 → 2024-12-05 (-1d) |  |  | baseline start 2024-11-12 14:24 → 2024-11-12; baseline finish 2024-11-12 15:12 → 2024-11-12 |
| 67 | **Fechamento** | 2024-12-06 14:12 → 2024-12-05 (-1d) | 2024-12-18 14:12 → 2024-12-17 (-1d) |  |  | baseline start 2024-11-12 15:12 → 2024-11-12; baseline finish 2024-11-22 15:12 → 2024-11-22 |
| 68 | Apresentação do projeto ao cliente | 2024-12-06 14:12 → 2024-12-05 (-1d) | 2024-12-10 14:12 → 2024-12-09 (-1d) |  |  | baseline start 2024-11-12 15:12 → 2024-11-12; baseline finish 2024-11-14 15:12 → 2024-11-14 |
| 69 | Entrega do projeto ao cliente | 2024-12-10 14:12 → 2024-12-09 (-1d) | 2024-12-12 14:12 → 2024-12-11 (-1d) |  |  | baseline start 2024-11-14 15:12 → 2024-11-14; baseline finish 2024-11-18 15:12 → 2024-11-18 |
| 70 | Implantação do sistema | 2024-12-12 14:12 → 2024-12-11 (-1d) | 2024-12-18 14:12 → 2024-12-17 (-1d) |  |  | baseline start 2024-11-18 15:12 → 2024-11-18; baseline finish 2024-11-22 15:12 → 2024-11-22 |

| ID | Task | Start | Finish | Other |
| --- | --- | --- | --- | --- |
| 71 | Finalização | 2024-12-18 14:12 → 2024-12-17 (-1d) | 2024-12-18 14:12 → 2024-12-17 (-1d) | constraint start no earlier than 2024-09-09 08:00 → start no earlier than 2024-09-09; baseline start 2024-11-22 15:12 → 2024-11-22; baseline finish 2024-11-22 15:12 → 2024-11-22 |

## Version 8 (saved 2024-11-13)

Note of the change: Update cronograma e requisitos de relatórios

Last finish 2024-12-17 → 2024-12-09 (-8d). Complete tasks 23 → 21.

Added:

| ID | Task | Duration | Start | Finish | Predecessors |
| --- | --- | --- | --- | --- | --- |
| 44 | Manter Membros de IZZY | 2.5d | 2024-11-18 | 2024-11-20 | 41 |

Removed: 25 Revisar Protótipo; 33 Monitoramento e Controle; 39 Manter Membros de um IZZY; 49 Manter Fotos; 62 Realizar Testes; 64 Atualizar Cronograma

Changed:

| ID | Task | Start | Finish | Duration | Complete | Predecessors | Other |
| --- | --- | --- | --- | --- | --- | --- | --- |
| 1 | **ProjetoIZZY** |  | 2024-12-17 → 2024-12-09 (-8d) | 71.11d? → 65.04d? | 61% → 57% |  | baseline finish 2024-11-22 → 2024-12-09 |
| 2 | **Prospecção** |  | 2024-09-10 → 2024-09-11 (+1d) | 1.25d? → 2.75d? |  |  | baseline finish 2024-09-10 → 2024-09-11 |
| 3 | **PTEC** |  | 2024-09-10 → 2024-09-11 (+1d) | 1.25d? → 2.75d? |  |  | baseline finish 2024-09-10 → 2024-09-11 |
| 4 | Estudar o domínio de aplicaçao do sistema |  |  |  |  |  | resources none → Diogo; Enzo; Lucas; Thiago |
| 5 | Redigir PTE |  |  |  |  |  | resources none → Thiago |
| 6 | Revisar PTE |  | 2024-09-09 → 2024-09-11 (+2d) | 0.25d? → 2.75d? |  |  | resources none → Diogo; Enzo; Lucas; baseline finish 2024-09-09 → 2024-09-11 |
| 7 | **Est. Prel. Tam** |  | 2024-09-09 → 2024-09-11 (+2d) | 1d? → 2.25d? |  |  | baseline finish 2024-09-09 → 2024-09-11 |
| 8 | Estimar Tamanho do Projeto |  |  |  |  |  | resources none → Enzo |
| 9 | Revisar Estimar Tamanho do Projeto |  | 2024-09-09 → 2024-09-11 (+2d) | 0.25d? → 2.25d? |  |  | resources none → Diogo; Enzo; Lucas; baseline finish 2024-09-09 → 2024-09-11 |
| 10 | **Análise** |  | 2024-09-26 → 2024-10-02 (+6d) | 12.12d? → 16.62d? |  |  | baseline finish 2024-09-26 → 2024-10-02 |
| 11 | **DRE** |  | 2024-09-18 → 2024-09-24 (+6d) | 6d → 10.5d |  |  | baseline finish 2024-09-18 → 2024-09-24 |
| 12 | Levantar Requisitos do Sistema |  | 2024-09-12 → 2024-09-19 (+7d) | 2.5d → 7d |  |  | resources none → Diogo; Enzo; Lucas; Thiago; baseline finish 2024-09-12 → 2024-09-19 |
| 13 | Redigir DRE |  | 2024-09-17 → 2024-09-23 (+6d) | 2.75d → 7.25d |  |  | resources none → Lucas; Thiago; baseline finish 2024-09-17 → 2024-09-23 |
| 14 | Revisar DRE |  | 2024-09-18 → 2024-09-24 (+6d) | 0.75d → 5.25d |  |  | resources none → Diogo; Enzo; baseline finish 2024-09-18 → 2024-09-24 |
| 15 | **MRB** |  | 2024-09-26 → 2024-10-02 (+6d) | 6.12d? → 10.62d? |  |  | baseline finish 2024-09-26 → 2024-10-02 |
| 16 | Elaborar MRB |  | 2024-09-25 → 2024-10-02 (+7d) | 5.62d? → 10.12d? |  |  | resources none → Diogo; Enzo; baseline finish 2024-09-25 → 2024-10-02 |
| 17 | Revisar MRB |  | 2024-09-26 → 2024-10-02 (+6d) | 0.5d? → 5d? |  |  | resources none → Lucas; Thiago; baseline finish 2024-09-26 → 2024-10-02 |
| 18 | **Planejamento** |  | 2024-10-17 → 2024-10-11 (-6d) | 21.62d? → 17.25d? |  |  | baseline finish 2024-09-26 → 2024-10-11 |
| 19 | Desenvolver Plano de Projeto |  | 2024-09-18 → 2024-10-07 (+19d) | 0.25d? → 13.75d? |  |  | resources none → Diogo; Enzo; Lucas; Thiago; baseline finish 2024-09-18 → 2024-10-07 |
| 20 | Elaborar Estimativa de Tamanho/Esforço |  | 2024-09-18 → 2024-09-24 (+6d) | 0.25d? → 4.75d? |  |  | resources none → Diogo; Thiago; baseline finish 2024-09-18 → 2024-09-24 |
| 21 | Revisar Est. de Tamanho/Esforço |  | 2024-09-18 → 2024-09-25 (+7d) | 0.12d? → 4.62d? |  |  | resources none → Enzo; Lucas; baseline finish 2024-09-18 → 2024-09-25 |
| 22 | Elaborar Cronograma |  |  |  |  |  | resources none → Thiago |
| 23 | Revisar Cronograma |  |  |  |  |  | resources none → Thiago |
| 24 | Elaborar Protótipo | 2024-09-18 → 2024-09-24 (+6d) | 2024-10-04 → 2024-10-11 (+7d) |  |  |  | resources none → Diogo; baseline start 2024-09-18 → 2024-09-24; baseline finish 2024-09-26 → 2024-10-11 |
| 25 | **Desenvolvimento** | 2024-10-17 → 2024-11-04 (+18d) | 2024-12-05 → 2024-11-27 (-8d) | 34.24d? → 17.04d? | 35% → 20% |  | baseline start 2024-09-26 → 2024-11-04; baseline finish 2024-11-12 → 2024-11-27 |
| 26 | **Sprint 1** | 2024-10-17 → 2024-11-04 (+18d) |  | 16.69d? → 5.75d? |  |  | baseline start 2024-09-26 → 2024-11-04; baseline finish 2024-10-17 → 2024-11-11 |
| 27 | **Implementação** | 2024-10-17 → 2024-11-04 (+18d) |  | 16.38d? → 5.69d? |  |  | baseline start 2024-09-26 → 2024-11-04; baseline finish 2024-10-16 → 2024-11-11 |
| 28 | Manter Usuários | 2024-10-17 → 2024-11-04 (+18d) |  | 15d? → 3.5d? |  | Revisar Protótipo → none | constraint none → start no earlier than 2024-11-04; resources none → Diogo; Enzo; Lucas; Thiago; baseline start 2024-09-26 → 2024-11-04; baseline finish 2024-10-03 → 2024-11-07 |
| 29 | Realizar Testes |  |  |  |  |  | resources none → Thiago; baseline start 2024-10-03 → 2024-11-08; baseline finish 2024-10-04 → 2024-11-08 |
| 30 | Manter IZZY's |  |  | 1d? → 1.44d? |  |  | resources none → Enzo; Lucas; baseline start 2024-10-04 → 2024-11-08; baseline finish 2024-10-14 → 2024-11-11 |
| 31 | Realizar Testes |  |  |  |  |  | resources none → Thiago; baseline start 2024-10-14 → 2024-11-11; baseline finish 2024-10-16 → 2024-11-11 |
| 32 | **Gerência de Configuração** |  |  |  |  |  | baseline start 2024-10-17 → 2024-11-11; baseline finish 2024-10-17 → 2024-11-11 |
| 33 | Gerar nova Tag de Configuração |  |  |  |  | 39 → 31 | resources none → Thiago; baseline start 2024-10-17 → 2024-11-11; baseline finish 2024-10-17 → 2024-11-11 |
| 34 | **Sprint 2** | 2024-11-11 → 2024-11-12 (+1d) | 2024-11-26 → 2024-11-18 (-8d) | 10.85d? → 3.59d? |  |  | baseline start 2024-10-17 → 2024-11-12; baseline finish 2024-11-04 → 2024-11-18 |
| 35 | **Implementação** | 2024-11-11 → 2024-11-12 (+1d) | 2024-11-25 → 2024-11-18 (-7d) | 9.75d? → 3.41d? |  |  | baseline start 2024-10-17 → 2024-11-12; baseline finish 2024-10-30 → 2024-11-18 |
| 36 | Manter Atividades | 2024-11-11 → 2024-11-12 (+1d) | 2024-11-21 → 2024-11-18 (-3d) | 8.12d? → 3.31d? |  |  | constraint none → start no earlier than 2024-11-12; resources none → Diogo; Thiago; baseline start 2024-10-17 → 2024-11-12; baseline finish 2024-10-29 → 2024-11-18 |
| 37 | Realizar Testes | 2024-11-20 → 2024-11-18 (-2d) | 2024-11-21 → 2024-11-18 (-3d) | 1.25d? → 0.09d? |  | Manter Membros de um IZZY → 36 | resources none → Enzo; Lucas; baseline start 2024-10-25 → 2024-11-18; baseline finish 2024-10-28 → 2024-11-18 |
| 38 | **Monitoramento de Controle** | 2024-11-25 → 2024-11-18 (-7d) | 2024-11-26 → 2024-11-18 (-8d) | 1d? → 0.12d? |  |  | baseline start 2024-10-30 → 2024-11-18; baseline finish 2024-11-01 → 2024-11-18 |
| 39 | Atualizar Cronograma | 2024-11-11 → 2024-11-18 (+7d) | 2024-11-11 → 2024-11-18 (+7d) | 0.25d? → 0.12d? | 100% → 0% | 31 → 37 | resources none → Enzo; Lucas; baseline start 2024-10-16 → 2024-11-18; baseline finish 2024-10-17 → 2024-11-18 |
| 40 | **Gerência de Configuração** | 2024-11-26 → 2024-11-18 (-8d) | 2024-11-26 → 2024-11-18 (-8d) | 0.1d → 0.06d |  |  | baseline start 2024-11-01 → 2024-11-18; baseline finish 2024-11-04 → 2024-11-18 |
| 41 | Gerar nova Tag de Configuração | 2024-11-26 → 2024-11-18 (-8d) | 2024-11-26 → 2024-11-18 (-8d) | 0.1d → 0.06d |  | 49 → 39 | resources none → Enzo; baseline start 2024-11-01 → 2024-11-18; baseline finish 2024-11-04 → 2024-11-18 |
| 42 | **Sprint 3** | 2024-11-26 → 2024-11-18 (-8d) | 2024-11-29 → 2024-11-21 (-8d) |  |  |  | baseline start 2024-11-04 → 2024-11-18; baseline finish 2024-11-07 → 2024-11-21 |
| 43 | **Implementação** | 2024-11-26 → 2024-11-18 (-8d) | 2024-11-29 → 2024-11-21 (-8d) |  |  |  | baseline start 2024-11-04 → 2024-11-18; baseline finish 2024-11-07 → 2024-11-21 |
| 45 | Realizar Testes | 2024-11-21 → 2024-11-20 (-1d) | 2024-11-25 → 2024-11-21 (-4d) | 1.62d? → 0.5d? |  | 36 → 44 | baseline start 2024-10-29 → 2024-11-20; baseline finish 2024-10-30 → 2024-11-21 |
| 46 | Relatório de Atividades | 2024-11-26 → 2024-11-18 (-8d) | 2024-11-27 → 2024-11-19 (-8d) |  |  |  | baseline start 2024-11-04 → 2024-11-18; baseline finish 2024-11-05 → 2024-11-19 |
| 47 | Realizar Testes | 2024-11-28 → 2024-11-19 (-9d) | 2024-11-29 → 2024-11-19 (-10d) | 0.5d? → 0.25d? |  | Manter Fotos → 46 | baseline start 2024-11-06 → 2024-11-19; baseline finish 2024-11-07 → 2024-11-19 |
| 48 | **Monitoramento de Controle** | 2024-11-27 → 2024-11-19 (-8d) | 2024-11-28 → 2024-11-20 (-8d) |  |  |  | baseline start 2024-11-05 → 2024-11-19; baseline finish 2024-11-06 → 2024-11-20 |
| 49 | Atualizar Cronograma | 2024-11-25 → 2024-11-19 (-6d) | 2024-11-26 → 2024-11-20 (-6d) |  |  | 45 → 47 | baseline start 2024-10-31 → 2024-11-19; baseline finish 2024-11-01 → 2024-11-20 |
| 50 | **Gerência de Configuração** | 2024-11-28 → 2024-11-20 (-8d) | 2024-11-29 → 2024-11-20 (-9d) |  |  |  | baseline start 2024-11-06 → 2024-11-20; baseline finish 2024-11-06 → 2024-11-20 |
| 51 | Gerar nova Tag de Configuração | 2024-11-28 → 2024-11-20 (-8d) | 2024-11-29 → 2024-11-20 (-9d) |  |  | 59 → 49 | baseline start 2024-11-06 → 2024-11-20; baseline finish 2024-11-06 → 2024-11-20 |
| 52 | **Sprint 4** | 2024-11-29 → 2024-11-20 (-9d) | 2024-12-05 → 2024-11-27 (-8d) |  |  |  | baseline start 2024-11-06 → 2024-11-20; baseline finish 2024-11-12 → 2024-11-27 |
| 53 | **Implementação** | 2024-11-29 → 2024-11-20 (-9d) | 2024-12-04 → 2024-11-25 (-9d) |  |  |  | baseline start 2024-11-06 → 2024-11-20; baseline finish 2024-11-11 → 2024-11-25 |
| 54 | Relatório de Atividades Atrasadas | 2024-11-29 → 2024-11-20 (-9d) | 2024-12-02 → 2024-11-22 (-10d) |  |  |  | baseline start 2024-11-06 → 2024-11-20; baseline finish 2024-11-08 → 2024-11-22 |
| 55 | Realizar Testes | 2024-11-27 → 2024-11-22 (-5d) | 2024-11-27 → 2024-11-25 (-2d) | 0.25d? → 0.38d |  | 46 → 54 | baseline start 2024-11-05 → 2024-11-22; baseline finish 2024-11-05 → 2024-11-25 |
| 56 | Relatório de Participação dos Membros | 2024-11-29 → 2024-11-20 (-9d) | 2024-12-03 → 2024-11-25 (-8d) |  |  |  | baseline start 2024-11-06 → 2024-11-20; baseline finish 2024-11-11 → 2024-11-25 |
| 57 | Realizar Testes | 2024-12-02 → 2024-11-25 (-7d) | 2024-12-03 → 2024-11-25 (-8d) | 0.38d → 0.5d? |  | 54 → 56 | baseline start 2024-11-08 → 2024-11-25; baseline finish 2024-11-08 → 2024-11-25 |
| 58 | **Monitoramento de Controle** | 2024-12-04 → 2024-11-25 (-9d) | 2024-12-05 → 2024-11-26 (-9d) |  |  |  | baseline start 2024-11-11 → 2024-11-25; baseline finish 2024-11-12 → 2024-11-26 |
| 59 | Atualizar Cronograma | 2024-11-27 → 2024-11-25 (-2d) | 2024-11-28 → 2024-11-26 (-2d) |  |  | 55 → 57 | baseline start 2024-11-05 → 2024-11-25; baseline finish 2024-11-06 → 2024-11-26 |
| 60 | **Gerência de Configuração** | 2024-12-05 → 2024-11-26 (-9d) | 2024-12-05 → 2024-11-27 (-8d) |  |  |  | baseline start 2024-11-12 → 2024-11-26; baseline finish 2024-11-12 → 2024-11-27 |
| 61 | Gerar nova Tag de Configuração | 2024-12-05 → 2024-11-26 (-9d) | 2024-12-05 → 2024-11-27 (-8d) |  |  | Atualizar Cronograma → 59 | baseline start 2024-11-12 → 2024-11-26; baseline finish 2024-11-12 → 2024-11-27 |
| 62 | **Fechamento** | 2024-12-05 → 2024-11-27 (-8d) | 2024-12-17 → 2024-12-09 (-8d) |  |  |  | baseline start 2024-11-12 → 2024-11-27; baseline finish 2024-11-22 → 2024-12-09 |
| 63 | Apresentação do projeto ao cliente | 2024-12-05 → 2024-11-27 (-8d) | 2024-12-09 → 2024-11-29 (-10d) |  |  |  | baseline start 2024-11-12 → 2024-11-27; baseline finish 2024-11-14 → 2024-11-29 |
| 64 | Entrega do projeto ao cliente | 2024-12-09 → 2024-11-29 (-10d) | 2024-12-11 → 2024-12-03 (-8d) |  |  |  | baseline start 2024-11-14 → 2024-11-29; baseline finish 2024-11-18 → 2024-12-03 |
| 65 | Implantação do sistema | 2024-12-11 → 2024-12-03 (-8d) | 2024-12-17 → 2024-12-09 (-8d) |  |  |  | baseline start 2024-11-18 → 2024-12-03; baseline finish 2024-11-22 → 2024-12-09 |
| 66 | Finalização | 2024-12-17 → 2024-12-09 (-8d) | 2024-12-17 → 2024-12-09 (-8d) |  |  |  | baseline start 2024-11-22 → 2024-12-09; baseline finish 2024-11-22 → 2024-12-09 |

## Version 9 (saved 2024-11-17)

Note of the change: Update cronograma and index.ts

Last finish 2024-12-09 → 2024-12-06 (-3d).

Changed:

| ID | Task | Start | Finish | Duration | Other |
| --- | --- | --- | --- | --- | --- |
| 1 | **ProjetoIZZY** |  | 2024-12-09 → 2024-12-06 (-3d) | 65.04d? → 64.03d? |  |
| 25 | **Desenvolvimento** |  | 2024-11-27 → 2024-11-26 (-1d) | 17.04d? → 16.03d? |  |
| 34 | **Sprint 2** |  | 2024-11-18 → 2024-11-15 (-3d) | 3.59d? → 2.58d? |  |
| 35 | **Implementação** |  | 2024-11-18 → 2024-11-15 (-3d) | 3.41d? → 2.4d? |  |
| 36 | Manter Atividades |  | 2024-11-18 → 2024-11-14 (-4d) | 3.31d? → 2.21d? | resources Diogo; Thiago → Diogo; Enzo; Thiago |
| 37 | Realizar Testes | 2024-11-18 → 2024-11-14 (-4d) | 2024-11-18 → 2024-11-15 (-3d) | 0.09d? → 0.19d? | resources Enzo; Lucas → Lucas |
| 38 | **Monitoramento de Controle** | 2024-11-18 → 2024-11-15 (-3d) | 2024-11-18 → 2024-11-15 (-3d) |  |  |
| 39 | Atualizar Cronograma | 2024-11-18 → 2024-11-15 (-3d) | 2024-11-18 → 2024-11-15 (-3d) |  |  |
| 40 | **Gerência de Configuração** | 2024-11-18 → 2024-11-15 (-3d) | 2024-11-18 → 2024-11-15 (-3d) |  |  |
| 41 | Gerar nova Tag de Configuração | 2024-11-18 → 2024-11-15 (-3d) | 2024-11-18 → 2024-11-15 (-3d) |  |  |
| 42 | **Sprint 3** | 2024-11-18 → 2024-11-15 (-3d) | 2024-11-21 → 2024-11-20 (-1d) |  |  |
| 43 | **Implementação** | 2024-11-18 → 2024-11-15 (-3d) | 2024-11-21 → 2024-11-20 (-1d) |  |  |
| 44 | Manter Membros de IZZY | 2024-11-18 → 2024-11-15 (-3d) | 2024-11-20 → 2024-11-19 (-1d) |  |  |
| 45 | Realizar Testes | 2024-11-20 → 2024-11-19 (-1d) | 2024-11-21 → 2024-11-20 (-1d) |  |  |
| 46 | Relatório de Atividades | 2024-11-18 → 2024-11-15 (-3d) | 2024-11-19 → 2024-11-18 (-1d) |  |  |
| 47 | Realizar Testes | 2024-11-19 → 2024-11-18 (-1d) | 2024-11-19 → 2024-11-18 (-1d) |  |  |
| 48 | **Monitoramento de Controle** | 2024-11-19 → 2024-11-18 (-1d) | 2024-11-20 → 2024-11-19 (-1d) |  |  |
| 49 | Atualizar Cronograma | 2024-11-19 → 2024-11-18 (-1d) | 2024-11-20 → 2024-11-19 (-1d) |  |  |
| 50 | **Gerência de Configuração** | 2024-11-20 → 2024-11-19 (-1d) | 2024-11-20 → 2024-11-19 (-1d) |  |  |
| 51 | Gerar nova Tag de Configuração | 2024-11-20 → 2024-11-19 (-1d) | 2024-11-20 → 2024-11-19 (-1d) |  |  |
| 52 | **Sprint 4** | 2024-11-20 → 2024-11-19 (-1d) | 2024-11-27 → 2024-11-26 (-1d) |  |  |
| 53 | **Implementação** | 2024-11-20 → 2024-11-19 (-1d) | 2024-11-25 → 2024-11-22 (-3d) |  |  |
| 54 | Relatório de Atividades Atrasadas | 2024-11-20 → 2024-11-19 (-1d) | 2024-11-22 → 2024-11-21 (-1d) |  |  |
| 55 | Realizar Testes | 2024-11-22 → 2024-11-21 (-1d) | 2024-11-25 → 2024-11-22 (-3d) |  |  |
| 56 | Relatório de Participação dos Membros | 2024-11-20 → 2024-11-19 (-1d) | 2024-11-25 → 2024-11-22 (-3d) |  |  |
| 57 | Realizar Testes | 2024-11-25 → 2024-11-22 (-3d) | 2024-11-25 → 2024-11-22 (-3d) |  |  |
| 58 | **Monitoramento de Controle** | 2024-11-25 → 2024-11-22 (-3d) | 2024-11-26 → 2024-11-25 (-1d) |  |  |
| 59 | Atualizar Cronograma | 2024-11-25 → 2024-11-22 (-3d) | 2024-11-26 → 2024-11-25 (-1d) |  |  |
| 60 | **Gerência de Configuração** | 2024-11-26 → 2024-11-25 (-1d) | 2024-11-27 → 2024-11-26 (-1d) |  |  |
| 61 | Gerar nova Tag de Configuração | 2024-11-26 → 2024-11-25 (-1d) | 2024-11-27 → 2024-11-26 (-1d) |  |  |
| 62 | **Fechamento** | 2024-11-27 → 2024-11-26 (-1d) | 2024-12-09 → 2024-12-06 (-3d) |  |  |
| 63 | Apresentação do projeto ao cliente | 2024-11-27 → 2024-11-26 (-1d) | 2024-11-29 → 2024-11-28 (-1d) |  |  |
| 64 | Entrega do projeto ao cliente | 2024-11-29 → 2024-11-28 (-1d) | 2024-12-03 → 2024-12-02 (-1d) |  |  |
| 65 | Implantação do sistema | 2024-12-03 → 2024-12-02 (-1d) | 2024-12-09 → 2024-12-06 (-3d) |  |  |
| 66 | Finalização | 2024-12-09 → 2024-12-06 (-3d) | 2024-12-09 → 2024-12-06 (-3d) |  |  |

## Version 10 (saved 2024-11-17)

Note of the change: Update DRE and Cronograma

Last finish 2024-12-06 → 2024-12-09 (+3d). Complete tasks 21 → 25.

Changed:

| ID | Task | Start | Finish | Duration | Complete |
| --- | --- | --- | --- | --- | --- |
| 1 | **ProjetoIZZY** |  | 2024-12-06 → 2024-12-09 (+3d) | 64.03d? → 65.01d? | 57% → 69% |
| 25 | **Desenvolvimento** |  | 2024-11-26 → 2024-11-27 (+1d) | 16.03d? → 17.01d? | 20% → 55% |
| 34 | **Sprint 2** |  | 2024-11-15 → 2024-11-18 (+3d) | 2.58d? → 3.56d? | 0% → 100% |
| 35 | **Implementação** |  | 2024-11-15 → 2024-11-18 (+3d) | 2.4d? → 3.44d? | 0% → 100% |
| 36 | Manter Atividades |  | 2024-11-14 → 2024-11-15 (+1d) | 2.21d? → 3.25d? | 0% → 100% |
| 37 | Realizar Testes | 2024-11-14 → 2024-11-18 (+4d) | 2024-11-15 → 2024-11-18 (+3d) |  | 0% → 100% |
| 38 | **Monitoramento de Controle** | 2024-11-15 → 2024-11-18 (+3d) | 2024-11-15 → 2024-11-18 (+3d) | 0.12d? → 0.06d? | 0% → 100% |
| 39 | Atualizar Cronograma | 2024-11-15 → 2024-11-18 (+3d) | 2024-11-15 → 2024-11-18 (+3d) | 0.12d? → 0.06d? | 0% → 100% |
| 40 | **Gerência de Configuração** | 2024-11-15 → 2024-11-18 (+3d) | 2024-11-15 → 2024-11-18 (+3d) |  | 0% → 100% |
| 41 | Gerar nova Tag de Configuração | 2024-11-15 → 2024-11-18 (+3d) | 2024-11-15 → 2024-11-18 (+3d) |  | 0% → 100% |
| 42 | **Sprint 3** | 2024-11-15 → 2024-11-18 (+3d) | 2024-11-20 → 2024-11-21 (+1d) |  |  |
| 43 | **Implementação** | 2024-11-15 → 2024-11-18 (+3d) | 2024-11-20 → 2024-11-21 (+1d) |  |  |
| 44 | Manter Membros de IZZY | 2024-11-15 → 2024-11-18 (+3d) | 2024-11-19 → 2024-11-20 (+1d) |  |  |
| 45 | Realizar Testes | 2024-11-19 → 2024-11-20 (+1d) | 2024-11-20 → 2024-11-21 (+1d) |  |  |
| 46 | Relatório de Atividades | 2024-11-15 → 2024-11-18 (+3d) | 2024-11-18 → 2024-11-19 (+1d) |  |  |
| 47 | Realizar Testes | 2024-11-18 → 2024-11-19 (+1d) | 2024-11-18 → 2024-11-19 (+1d) |  |  |
| 48 | **Monitoramento de Controle** | 2024-11-18 → 2024-11-19 (+1d) | 2024-11-19 → 2024-11-20 (+1d) |  |  |
| 49 | Atualizar Cronograma | 2024-11-18 → 2024-11-19 (+1d) | 2024-11-19 → 2024-11-20 (+1d) |  |  |
| 50 | **Gerência de Configuração** | 2024-11-19 → 2024-11-20 (+1d) | 2024-11-19 → 2024-11-20 (+1d) |  |  |
| 51 | Gerar nova Tag de Configuração | 2024-11-19 → 2024-11-20 (+1d) | 2024-11-19 → 2024-11-20 (+1d) |  |  |
| 52 | **Sprint 4** | 2024-11-19 → 2024-11-20 (+1d) | 2024-11-26 → 2024-11-27 (+1d) |  |  |
| 53 | **Implementação** | 2024-11-19 → 2024-11-20 (+1d) | 2024-11-22 → 2024-11-25 (+3d) |  |  |
| 54 | Relatório de Atividades Atrasadas | 2024-11-19 → 2024-11-20 (+1d) | 2024-11-21 → 2024-11-22 (+1d) |  |  |
| 55 | Realizar Testes | 2024-11-21 → 2024-11-22 (+1d) | 2024-11-22 → 2024-11-25 (+3d) |  |  |
| 56 | Relatório de Participação dos Membros | 2024-11-19 → 2024-11-20 (+1d) | 2024-11-22 → 2024-11-25 (+3d) |  |  |
| 57 | Realizar Testes | 2024-11-22 → 2024-11-25 (+3d) | 2024-11-22 → 2024-11-25 (+3d) |  |  |
| 58 | **Monitoramento de Controle** | 2024-11-22 → 2024-11-25 (+3d) | 2024-11-25 → 2024-11-26 (+1d) |  |  |
| 59 | Atualizar Cronograma | 2024-11-22 → 2024-11-25 (+3d) | 2024-11-25 → 2024-11-26 (+1d) |  |  |
| 60 | **Gerência de Configuração** | 2024-11-25 → 2024-11-26 (+1d) | 2024-11-26 → 2024-11-27 (+1d) |  |  |
| 61 | Gerar nova Tag de Configuração | 2024-11-25 → 2024-11-26 (+1d) | 2024-11-26 → 2024-11-27 (+1d) |  |  |
| 62 | **Fechamento** | 2024-11-26 → 2024-11-27 (+1d) | 2024-12-06 → 2024-12-09 (+3d) |  |  |
| 63 | Apresentação do projeto ao cliente | 2024-11-26 → 2024-11-27 (+1d) | 2024-11-28 → 2024-11-29 (+1d) |  |  |
| 64 | Entrega do projeto ao cliente | 2024-11-28 → 2024-11-29 (+1d) | 2024-12-02 → 2024-12-03 (+1d) |  |  |
| 65 | Implantação do sistema | 2024-12-02 → 2024-12-03 (+1d) | 2024-12-06 → 2024-12-09 (+3d) |  |  |
| 66 | Finalização | 2024-12-06 → 2024-12-09 (+3d) | 2024-12-06 → 2024-12-09 (+3d) |  |  |

## Version 11 (saved 2024-11-25)

Note of the change: Update cronograma

Last finish 2024-12-09 → 2024-12-11 (+2d). Complete tasks 25 → 31.

Changed:

| ID | Task | Start | Finish | Duration | Complete | Predecessors | Other |
| --- | --- | --- | --- | --- | --- | --- | --- |
| 1 | **ProjetoIZZY** | 2024-09-09 → 2024-09-09 08:00 | 2024-12-09 → 2024-12-11 14:48 (+2d) | 65.01d? → 67.72d? | 69% → 78% |  | baseline start 2024-09-09 → 2024-09-09 08:00; baseline finish 2024-12-09 → 2024-12-09 08:21 |
| 2 | **Prospecção** | 2024-09-09 → 2024-09-09 08:00 | 2024-09-11 → 2024-09-11 15:00 |  |  |  | baseline start 2024-09-09 → 2024-09-09 08:00; baseline finish 2024-09-11 → 2024-09-11 15:00 |
| 3 | **PTEC** | 2024-09-09 → 2024-09-09 08:00 | 2024-09-11 → 2024-09-11 15:00 |  |  |  | baseline start 2024-09-09 → 2024-09-09 08:00; baseline finish 2024-09-11 → 2024-09-11 15:00 |
| 4 | Estudar o domínio de aplicaçao do sistema | 2024-09-09 → 2024-09-09 08:00 | 2024-09-10 → 2024-09-10 10:00 |  |  |  | baseline start 2024-09-09 → 2024-09-09 08:00; baseline finish 2024-09-10 → 2024-09-10 10:00 |
| 5 | Redigir PTE | 2024-09-09 → 2024-09-09 08:00 | 2024-09-10 → 2024-09-10 10:00 |  |  |  | baseline start 2024-09-09 → 2024-09-09 08:00; baseline finish 2024-09-10 → 2024-09-10 10:00 |
| 6 | Revisar PTE | 2024-09-09 → 2024-09-09 08:00 | 2024-09-11 → 2024-09-11 15:00 |  |  |  | baseline start 2024-09-09 → 2024-09-09 08:00; baseline finish 2024-09-11 → 2024-09-11 15:00 |
| 7 | **Est. Prel. Tam** | 2024-09-09 → 2024-09-09 08:00 | 2024-09-11 → 2024-09-11 10:00 |  |  |  | baseline start 2024-09-09 → 2024-09-09 08:00; baseline finish 2024-09-11 → 2024-09-11 10:00 |
| 8 | Estimar Tamanho do Projeto | 2024-09-09 → 2024-09-09 08:00 | 2024-09-09 → 2024-09-09 17:00 |  |  |  | baseline start 2024-09-09 → 2024-09-09 08:00; baseline finish 2024-09-09 → 2024-09-09 17:00 |
| 9 | Revisar Estimar Tamanho do Projeto | 2024-09-09 → 2024-09-09 08:00 | 2024-09-11 → 2024-09-11 10:00 |  |  |  | baseline start 2024-09-09 → 2024-09-09 08:00; baseline finish 2024-09-11 → 2024-09-11 10:00 |
| 10 | **Análise** | 2024-09-10 → 2024-09-10 10:00 | 2024-10-02 → 2024-10-02 16:00 |  |  |  | baseline start 2024-09-10 → 2024-09-10 10:00; baseline finish 2024-10-02 → 2024-10-02 16:00 |
| 11 | **DRE** | 2024-09-10 → 2024-09-10 10:00 | 2024-09-24 → 2024-09-24 15:00 |  |  |  | baseline start 2024-09-10 → 2024-09-10 10:00; baseline finish 2024-09-24 → 2024-09-24 15:00 |
| 12 | Levantar Requisitos do Sistema | 2024-09-10 → 2024-09-10 10:00 | 2024-09-19 → 2024-09-19 10:00 |  |  |  | baseline start 2024-09-10 → 2024-09-10 10:00; baseline finish 2024-09-19 → 2024-09-19 10:00 |
| 13 | Redigir DRE | 2024-09-12 → 2024-09-12 15:00 | 2024-09-23 → 2024-09-23 17:00 |  |  |  | baseline start 2024-09-12 → 2024-09-12 15:00; baseline finish 2024-09-23 → 2024-09-23 17:00 |
| 14 | Revisar DRE | 2024-09-17 → 2024-09-17 12:00 | 2024-09-24 → 2024-09-24 15:00 |  |  |  | baseline start 2024-09-17 → 2024-09-17 12:00; baseline finish 2024-09-24 → 2024-09-24 15:00 |
| 15 | **MRB** | 2024-09-18 → 2024-09-18 10:00 | 2024-10-02 → 2024-10-02 16:00 |  |  |  | baseline start 2024-09-18 → 2024-09-18 10:00; baseline finish 2024-10-02 → 2024-10-02 16:00 |
| 16 | Elaborar MRB | 2024-09-18 → 2024-09-18 10:00 | 2024-10-02 → 2024-10-02 11:00 |  |  |  | baseline start 2024-09-18 → 2024-09-18 10:00; baseline finish 2024-10-02 → 2024-10-02 11:00 |
| 17 | Revisar MRB | 2024-09-25 → 2024-09-25 16:00 | 2024-10-02 → 2024-10-02 16:00 |  |  |  | baseline start 2024-09-25 → 2024-09-25 16:00; baseline finish 2024-10-02 → 2024-10-02 16:00 |
| 18 | **Planejamento** | 2024-09-18 → 2024-09-18 10:00 | 2024-10-11 → 2024-10-11 13:00 |  |  |  | baseline start 2024-09-18 → 2024-09-18 10:00; baseline finish 2024-10-11 → 2024-10-11 13:00 |
| 19 | Desenvolver Plano de Projeto | 2024-09-18 → 2024-09-18 10:00 | 2024-10-07 → 2024-10-07 17:00 |  |  |  | baseline start 2024-09-18 → 2024-09-18 10:00; baseline finish 2024-10-07 → 2024-10-07 17:00 |
| 20 | Elaborar Estimativa de Tamanho/Esforço | 2024-09-18 → 2024-09-18 10:00 | 2024-09-24 → 2024-09-24 17:00 |  |  |  | baseline start 2024-09-18 → 2024-09-18 10:00; baseline finish 2024-09-24 → 2024-09-24 17:00 |
| 21 | Revisar Est. de Tamanho/Esforço | 2024-09-18 → 2024-09-18 12:00 | 2024-09-25 → 2024-09-25 09:00 |  |  |  | baseline start 2024-09-18 → 2024-09-18 12:00; baseline finish 2024-09-25 → 2024-09-25 09:00 |
| 22 | Elaborar Cronograma | 2024-09-18 → 2024-09-18 12:00 | 2024-09-19 → 2024-09-19 13:00 |  |  |  | baseline start 2024-09-18 → 2024-09-18 12:00; baseline finish 2024-09-19 → 2024-09-19 13:00 |
| 23 | Revisar Cronograma | 2024-09-19 → 2024-09-19 12:00 | 2024-09-19 → 2024-09-19 14:00 |  |  |  | baseline start 2024-09-19 → 2024-09-19 12:00; baseline finish 2024-09-19 → 2024-09-19 14:00 |
| 24 | Elaborar Protótipo | 2024-09-24 → 2024-09-24 15:00 | 2024-10-11 → 2024-10-11 13:00 |  |  |  | baseline start 2024-09-24 → 2024-09-24 15:00; baseline finish 2024-10-11 → 2024-10-11 13:00 |
| 25 | **Desenvolvimento** | 2024-11-04 → 2024-11-04 08:00 | 2024-11-27 → 2024-11-29 14:48 (+2d) | 17.01d? → 19.73d? | 55% → 76% |  | baseline start 2024-11-04 → 2024-11-04 08:00; baseline finish 2024-11-27 → 2024-11-27 08:21 |
| 26 | **Sprint 1** | 2024-11-04 → 2024-11-04 08:00 | 2024-11-11 → 2024-11-11 15:00 |  |  |  | baseline start 2024-11-04 → 2024-11-04 08:00; baseline finish 2024-11-11 → 2024-11-11 15:00 |
| 27 | **Implementação** | 2024-11-04 → 2024-11-04 08:00 | 2024-11-11 → 2024-11-11 14:30 |  |  |  | baseline start 2024-11-04 → 2024-11-04 08:00; baseline finish 2024-11-11 → 2024-11-11 14:30 |
| 28 | Manter Usuários | 2024-11-04 → 2024-11-04 08:00 | 2024-11-07 → 2024-11-07 13:00 |  |  |  | constraint start no earlier than 2024-11-04 → start no earlier than 2024-11-04 08:00; baseline start 2024-11-04 → 2024-11-04 08:00; baseline finish 2024-11-07 → 2024-11-07 13:00 |
| 29 | Realizar Testes | 2024-11-08 → 2024-11-08 08:00 | 2024-11-08 → 2024-11-08 09:00 |  |  |  | constraint start no earlier than 2024-11-08 → start no earlier than 2024-11-08 08:00; baseline start 2024-11-08 → 2024-11-08 08:00; baseline finish 2024-11-08 → 2024-11-08 09:00 |
| 30 | Manter IZZY's | 2024-11-08 → 2024-11-08 09:00 | 2024-11-11 → 2024-11-11 13:30 |  |  |  | baseline start 2024-11-08 → 2024-11-08 09:00; baseline finish 2024-11-11 → 2024-11-11 13:30 |
| 31 | Realizar Testes | 2024-11-11 → 2024-11-11 13:30 | 2024-11-11 → 2024-11-11 14:30 |  |  |  | constraint start no earlier than 2024-11-11 → start no earlier than 2024-11-11 08:00; baseline start 2024-11-11 → 2024-11-11 13:30; baseline finish 2024-11-11 → 2024-11-11 14:30 |
| 32 | **Gerência de Configuração** | 2024-11-11 → 2024-11-11 14:30 | 2024-11-11 → 2024-11-11 15:00 |  |  |  | baseline start 2024-11-11 → 2024-11-11 14:30; baseline finish 2024-11-11 → 2024-11-11 15:00 |
| 33 | Gerar nova Tag de Configuração | 2024-11-11 → 2024-11-11 14:30 | 2024-11-11 → 2024-11-11 15:00 |  |  |  | baseline start 2024-11-11 → 2024-11-11 14:30; baseline finish 2024-11-11 → 2024-11-11 15:00 |
| 34 | **Sprint 2** | 2024-11-12 → 2024-11-12 15:00 | 2024-11-18 → 2024-11-18 10:30 |  |  |  | baseline start 2024-11-12 → 2024-11-12 15:00; baseline finish 2024-11-18 → 2024-11-18 10:45 |
| 35 | **Implementação** | 2024-11-12 → 2024-11-12 15:00 | 2024-11-18 → 2024-11-18 09:30 |  |  |  | baseline start 2024-11-12 → 2024-11-12 15:00; baseline finish 2024-11-18 → 2024-11-18 09:15 |
| 36 | Manter Atividades | 2024-11-12 → 2024-11-12 15:00 | 2024-11-15 → 2024-11-15 17:00 |  |  |  | constraint start no earlier than 2024-11-12 → start no earlier than 2024-11-12 15:00; baseline start 2024-11-12 → 2024-11-12 15:00; baseline finish 2024-11-18 → 2024-11-18 08:30 |
| 37 | Realizar Testes | 2024-11-18 → 2024-11-18 08:00 | 2024-11-18 → 2024-11-18 09:30 |  |  |  | baseline start 2024-11-18 → 2024-11-18 08:30; baseline finish 2024-11-18 → 2024-11-18 09:15 |
| 38 | **Monitoramento de Controle** | 2024-11-18 → 2024-11-18 09:30 | 2024-11-18 → 2024-11-18 10:00 |  |  |  | baseline start 2024-11-18 → 2024-11-18 09:15; baseline finish 2024-11-18 → 2024-11-18 10:15 |
| 39 | Atualizar Cronograma | 2024-11-18 → 2024-11-18 09:30 | 2024-11-18 → 2024-11-18 10:00 |  |  |  | baseline start 2024-11-18 → 2024-11-18 09:15; baseline finish 2024-11-18 → 2024-11-18 10:15 |
| 40 | **Gerência de Configuração** | 2024-11-18 → 2024-11-18 10:00 | 2024-11-18 → 2024-11-18 10:30 |  |  |  | baseline start 2024-11-18 → 2024-11-18 10:15; baseline finish 2024-11-18 → 2024-11-18 10:45 |
| 41 | Gerar nova Tag de Configuração | 2024-11-18 → 2024-11-18 10:00 | 2024-11-18 → 2024-11-18 10:30 |  |  |  | baseline start 2024-11-18 → 2024-11-18 10:15; baseline finish 2024-11-18 → 2024-11-18 10:45 |
| 42 | **Sprint 3** | 2024-11-18 → 2024-11-18 10:30 | 2024-11-21 → 2024-11-25 14:00 (+4d) | 3d? → 5.31d? | 0% → 100% |  | baseline start 2024-11-18 → 2024-11-18 10:45; baseline finish 2024-11-21 → 2024-11-21 10:45 |
| 43 | **Implementação** | 2024-11-18 → 2024-11-18 10:30 | 2024-11-21 → 2024-11-25 13:00 (+4d) | 3d? → 5.19d? | 0% → 100% |  | baseline start 2024-11-18 → 2024-11-18 10:45; baseline finish 2024-11-21 → 2024-11-21 10:45 |
| 44 | Manter Membros de IZZY | 2024-11-18 → 2024-11-18 10:30 | 2024-11-20 → 2024-11-21 17:00 (+1d) | 2.5d → 3.69d | 0% → 100% |  | resources none → Diogo; Enzo; Thiago; baseline start 2024-11-18 → 2024-11-18 10:45; baseline finish 2024-11-20 → 2024-11-20 15:45 |
| 45 | Realizar Testes | 2024-11-20 → 2024-11-22 08:00 (+2d) | 2024-11-21 → 2024-11-22 09:00 (+1d) | 0.5d? → 0.12d? | 0% → 100% |  | resources none → Lucas; baseline start 2024-11-20 → 2024-11-20 15:45; baseline finish 2024-11-21 → 2024-11-21 10:45 |
| 46 | Relatório de Atividades | 2024-11-18 → 2024-11-22 09:00 (+4d) | 2024-11-19 → 2024-11-25 10:00 (+6d) | 1.25d? → 1.12d? | 0% → 100% | 41 → 45 | resources none → Diogo; Lucas; baseline start 2024-11-18 → 2024-11-18 10:45; baseline finish 2024-11-19 → 2024-11-19 13:45 |
| 47 | Realizar Testes | 2024-11-19 → 2024-11-25 10:00 (+6d) | 2024-11-19 → 2024-11-25 13:00 (+6d) |  | 0% → 100% |  | resources none → Enzo; Thiago; baseline start 2024-11-19 → 2024-11-19 13:45; baseline finish 2024-11-19 → 2024-11-19 15:45 |
| 48 | **Monitoramento de Controle** | 2024-11-19 → 2024-11-25 12:00 (+6d) | 2024-11-20 → 2024-11-25 13:30 (+5d) | 1d? → 0.06d? | 0% → 100% |  | baseline start 2024-11-19 → 2024-11-19 15:45; baseline finish 2024-11-20 → 2024-11-20 15:45 |
| 49 | Atualizar Cronograma | 2024-11-19 → 2024-11-25 12:00 (+6d) | 2024-11-20 → 2024-11-25 13:30 (+5d) | 1d? → 0.06d? | 0% → 100% |  | resources none → Thiago; baseline start 2024-11-19 → 2024-11-19 15:45; baseline finish 2024-11-20 → 2024-11-20 15:45 |
| 50 | **Gerência de Configuração** | 2024-11-20 → 2024-11-25 13:30 (+5d) | 2024-11-20 → 2024-11-25 14:00 (+5d) | 0.1d → 0.06d | 0% → 100% |  | baseline start 2024-11-20 → 2024-11-20 15:45; baseline finish 2024-11-20 → 2024-11-20 16:33 |
| 51 | Gerar nova Tag de Configuração | 2024-11-20 → 2024-11-25 13:30 (+5d) | 2024-11-20 → 2024-11-25 14:00 (+5d) | 0.1d → 0.06d | 0% → 100% |  | resources none → Thiago; baseline start 2024-11-20 → 2024-11-20 15:45; baseline finish 2024-11-20 → 2024-11-20 16:33 |
| 52 | **Sprint 4** | 2024-11-20 → 2024-11-25 14:00 (+5d) | 2024-11-27 → 2024-11-29 14:48 (+2d) |  |  |  | baseline start 2024-11-20 → 2024-11-20 16:33; baseline finish 2024-11-27 → 2024-11-27 08:21 |
| 53 | **Implementação** | 2024-11-20 → 2024-11-25 14:00 (+5d) | 2024-11-25 → 2024-11-28 14:00 (+3d) |  |  |  | baseline start 2024-11-20 → 2024-11-20 16:33; baseline finish 2024-11-25 → 2024-11-25 16:33 |
| 54 | Relatório de Atividades Atrasadas | 2024-11-20 → 2024-11-25 14:00 (+5d) | 2024-11-22 → 2024-11-27 13:00 (+5d) |  |  |  | baseline start 2024-11-20 → 2024-11-20 16:33; baseline finish 2024-11-22 → 2024-11-22 15:33 |
| 55 | Realizar Testes | 2024-11-22 → 2024-11-27 13:00 (+5d) | 2024-11-25 → 2024-11-27 16:00 (+2d) |  |  |  | baseline start 2024-11-22 → 2024-11-22 15:33; baseline finish 2024-11-25 → 2024-11-25 09:33 |
| 56 | Relatório de Participação dos Membros | 2024-11-20 → 2024-11-25 14:00 (+5d) | 2024-11-25 → 2024-11-28 09:00 (+3d) |  |  |  | baseline start 2024-11-20 → 2024-11-20 16:33; baseline finish 2024-11-25 → 2024-11-25 11:33 |
| 57 | Realizar Testes | 2024-11-25 → 2024-11-28 09:00 (+3d) | 2024-11-25 → 2024-11-28 14:00 (+3d) |  |  |  | baseline start 2024-11-25 → 2024-11-25 11:33; baseline finish 2024-11-25 → 2024-11-25 16:33 |
| 58 | **Monitoramento de Controle** | 2024-11-25 → 2024-11-28 14:00 (+3d) | 2024-11-26 → 2024-11-29 14:00 (+3d) |  |  |  | baseline start 2024-11-25 → 2024-11-25 16:33; baseline finish 2024-11-26 → 2024-11-26 16:33 |
| 59 | Atualizar Cronograma | 2024-11-25 → 2024-11-28 14:00 (+3d) | 2024-11-26 → 2024-11-29 14:00 (+3d) |  |  |  | baseline start 2024-11-25 → 2024-11-25 16:33; baseline finish 2024-11-26 → 2024-11-26 16:33 |
| 60 | **Gerência de Configuração** | 2024-11-26 → 2024-11-29 14:00 (+3d) | 2024-11-27 → 2024-11-29 14:48 (+2d) |  |  |  | baseline start 2024-11-26 → 2024-11-26 16:33; baseline finish 2024-11-27 → 2024-11-27 08:21 |
| 61 | Gerar nova Tag de Configuração | 2024-11-26 → 2024-11-29 14:00 (+3d) | 2024-11-27 → 2024-11-29 14:48 (+2d) |  |  |  | baseline start 2024-11-26 → 2024-11-26 16:33; baseline finish 2024-11-27 → 2024-11-27 08:21 |
| 62 | **Fechamento** | 2024-11-27 → 2024-11-29 14:48 (+2d) | 2024-12-09 → 2024-12-11 14:48 (+2d) |  |  |  | baseline start 2024-11-27 → 2024-11-27 08:21; baseline finish 2024-12-09 → 2024-12-09 08:21 |
| 63 | Apresentação do projeto ao cliente | 2024-11-27 → 2024-11-29 14:48 (+2d) | 2024-11-29 → 2024-12-03 14:48 (+4d) |  |  |  | baseline start 2024-11-27 → 2024-11-27 08:21; baseline finish 2024-11-29 → 2024-11-29 08:21 |
| 64 | Entrega do projeto ao cliente | 2024-11-29 → 2024-12-03 14:48 (+4d) | 2024-12-03 → 2024-12-05 14:48 (+2d) |  |  |  | baseline start 2024-11-29 → 2024-11-29 08:21; baseline finish 2024-12-03 → 2024-12-03 08:21 |
| 65 | Implantação do sistema | 2024-12-03 → 2024-12-05 14:48 (+2d) | 2024-12-09 → 2024-12-11 14:48 (+2d) |  |  |  | baseline start 2024-12-03 → 2024-12-03 08:21; baseline finish 2024-12-09 → 2024-12-09 08:21 |
| 66 | Finalização | 2024-12-09 → 2024-12-11 14:48 (+2d) | 2024-12-09 → 2024-12-11 14:48 (+2d) |  |  |  | constraint start no earlier than 2024-09-09 → start no earlier than 2024-09-09 08:00; baseline start 2024-12-09 → 2024-12-09 08:21; baseline finish 2024-12-09 → 2024-12-09 08:21 |
